# Предварительный план2007

Schedule from MS Project, 2013-04-22 to 2014-09-11, A marks actual dates.

## Calendars

- Стандартный: Mon-Fri 09:00-13:00, 14:00-18:00; Sat-Sun off. Exceptions (off unless hours are given): 2013-05-01 to 2013-05-05 (Первое мая), 2013-05-09 to 2013-05-12 (Девятое мая), 2013-12-30 to 2014-01-08 (новый год).

## Resources

| Resource |
| --- |
| Шилин Роман |
| Аналитик |
| Андрей Пирожков |
| Тугушев Илья |
| Денис Митавский |
| Алексей Львов |
| Андрей Карандей |
| Валерий Мацукевич |
| Java разработчик3 |
| Java разработчик4 |
| WEB-дизайнер |
| Влад Симоненко |
| Андрей Цветков |
| Java разработчик5 |
| Тест Аналитик |
| Java разработчик6 |
| Тестировщик |
| Технический писатель |
| Технолог - администратор |
| Технический писатель2 |
| Системный аналитик1 |
| Системный аналитик2 |
| Системный аналитик3 |
| Системный аналитик4 |
| Владимир Панов |
| Сергей Кашанский |
| Роман Митинков |
| Роман Болотов |
| Глеб Ноздрачев |
| Евгения Капустина |
| Эдуард Михайлов |
| Тимофей Билый |
| (БТЛ) Михаил Ларин |
| (БТЛ) Олег Еренцов |
| (БТЛ) Дмитрий Лякин |
| (БТЛ)Сергей Степыгин |
| Ярослав Бондарчук |
| Александр Власюк |
| Евгений Баланенко |
| Евгений Сафроненко |
| Сергей Околот |
| Леся Пуховая |
| Наталья Смолянец (Смолянец) |
| Антон Ганчев (Киев) |
| Тимофей Щербатый |

## Schedule

| ID | WBS | Task | Type | Duration | Start | Finish | Predecessors | Complete | Remaining | Total slack | Free slack | Constraint | Resources | Work | Actual work |
| --- | --- | --- | --- | --- | --- | --- | --- | --- | --- | --- | --- | --- | --- | --- | --- |
| 1 | 1 | **Разработка версии CM4/5** |  | 351d? | 2013-04-22 A | 2014-09-11 |  | 37% | 221.6d? | 0d |  |  |  | 27466.2h | 9710.68h |
| 2 | 1.1 | Принято решение о начале разработки | milestone | 0d | 2013-04-22 | 2013-04-22 |  |  |  | 0d |  | start no earlier than 2013-04-22 |  |  |  |
| 3 | 1.2 | Управление проектом |  | 267d | 2013-04-22 A | 2014-05-16 | 2 | 35% | 173.55d | 84d |  |  | Шилин Роман | 2136h | 747.6h |
| 4 | 1.3 | **Управление требованиями** |  | 331d | 2013-05-27 A | 2014-09-11 | 2 | 19% | 268.4d | 0d |  |  | Аналитик | 4567.2h | 1034.44h |
| 5 | 1.3.1 | Выделен аналитик на проект | milestone | 0d | 2013-05-27 A | 2013-05-27 A |  | 100% |  |  |  | start no earlier than 2013-05-27 |  |  |  |
| 6 | 1.3.2 | Формирование скоупа проекта _ верхний уровень |  | 15d | 2013-05-27 A | 2013-06-14 A | 5 | 100% |  |  |  |  | Евгения Капустина | 120h | 120h |
| 7 | 1.3.3 | Скоуп на систему сформирован и утвержден | milestone | 0d | 2013-06-21 A | 2013-06-21 A | 6FS+5d | 100% |  |  |  |  |  |  |  |
| 8 | 1.3.4 | Сопровождение требований |  | 311d | 2013-06-24 A | 2014-09-11 | 5, 7 | 15% | 264.35d | 0d |  |  | Эдуард Михайлов; Евгения Капустина | 1799.2h | 503.8h |
| 9 | 1.4 | **Создание модуля "Делопроизводство" (документоориентированная среда)** |  | 346d? | 2013-04-22 A | 2014-09-04 |  | 40% | 208.94d? | 5d |  |  |  | 20763h | 7928.64h |
| 10 | 1.4.1 | Первичные требования для создания модуля "Делопроизводство" подготовлены | milestone | 0d | 2013-04-22 | 2013-04-22 | 2 |  |  | 0d |  | finish no earlier than 2012-04-02 |  |  |  |
| 11 | 1.4.2 | **Апробация идей прототипа** |  | 24d | 2013-04-29 A | 2013-06-06 |  | 99% | 0d | 322d |  |  |  | 144h | 144h |
| 12 | 1.4.2.1 | Пирожков доступен | milestone | 0d | 2013-06-03 | 2013-06-03 |  |  |  | 326d |  | start no earlier than 2013-06-03 |  |  |  |
| 13 | 1.4.2.2 | Проведение предварительных испытаний системы |  | 9d | 2013-04-29 A | 2013-05-16 A | 10FS+5d | 100% |  |  |  |  | Андрей Цветков | 72h | 72h |
| 14 | 1.4.2.3 | Описание обработки ВХ. Док. На примере технологий прототипа |  | 9d | 2013-05-20 A | 2013-06-06 A |  | 100% |  |  |  | start no earlier than 2013-05-20 | Андрей Пирожков | 72h | 72h |
| 15 | 1.4.3 | **Настройка инфраструктуры** |  | 37d | 2013-05-20 A | 2013-07-09 | 24 | 67% | 12.33d | 115.51d | 0d |  |  | 120h | 80h |
| 16 | 1.4.3.1 | Настройка непрерывной интеграции |  | 4d | 2013-05-20 A | 2013-05-23 A |  | 100% |  |  |  |  | Тугушев Илья | 32h | 32h |
| 17 | 1.4.3.2 | Поддержка UNIT-тестирования и интеграционного тестирования на уроне среды непрерывной интеграции |  | 5d | 2013-06-04 | 2013-06-10 |  |  |  | 146.97d |  | start no earlier than 2013-06-04 | Тугушев Илья | 40h |  |
| 18 | 1.4.3.3 | Репакеджинг проекта |  | 3d | 2013-05-27 A | 2013-05-29 A |  | 100% |  |  |  | start no earlier than 2013-05-27 | Сергей Кашанский | 24h | 24h |
| 19 | 1.4.3.4 | Автоматическое заполнение параметров JDBC через Maven |  | 3d | 2013-07-05 A | 2013-07-09 A | 30 | 100% |  |  |  |  | Андрей Цветков | 24h | 24h |
| 20 | 1.4.4 | **Проектирование и формирование ядра системы** |  | 266d? | 2013-04-22 A | 2014-05-15 | 10 | 47% | 141.87d? | 17d | 0d |  |  | 12559h | 6169.44h |
| 21 | 1.4.4.1 | **Определение структуры модуля Делопроизводство** |  | 25d | 2013-04-22 A | 2013-05-31 A |  | 100% |  |  |  |  |  | 352h | 352h |
| 22 | 1.4.4.1.1 | Разбивка на слои |  | 5d | 2013-04-22 A | 2013-04-26 A |  | 100% |  |  |  |  | Денис Митавский [50%]; Андрей Пирожков [50%] | 40h | 40h |
| 23 | 1.4.4.1.2 | Конфигурации, загрузка и инициализация системы в базовой конфигурации |  | 5d | 2013-04-29 A | 2013-05-08 A | 22 | 100% |  |  |  |  | Валерий Мацукевич; Денис Митавский [50%] | 60h | 60h |
| 24 | 1.4.4.1.3 | Базовая конфигурация объектов системы |  | 5d | 2013-05-13 A | 2013-05-17 A | 22, 23 | 100% |  |  |  |  | Денис Митавский [50%]; Валерий Мацукевич | 60h | 60h |
| 25 | 1.4.4.1.4 | Юнит-тестирование - базис |  | 6d | 2013-05-17 A | 2013-05-24 A | 13 | 100% |  |  |  |  | Денис Митавский [50%]; Андрей Цветков | 72h | 72h |
| 26 | 1.4.4.1.5 | Базовая имплементация слоя DAO |  | 5d | 2013-05-20 A | 2013-05-24 A | 24 | 100% |  |  |  |  | Валерий Мацукевич | 40h | 40h |
| 27 | 1.4.4.1.6 | Обеспечение программных компонет верификации первой очереди |  | 5d | 2013-05-27 A | 2013-05-31 A | 26 | 100% |  |  |  |  | Валерий Мацукевич; Андрей Цветков | 80h | 80h |

Notes:
- 27: UNIT тестирование в рамках наработанного кода

| ID | WBS | Task | Type | Duration | Start | Finish | Predecessors | Complete | Remaining | Total slack | Free slack | Constraint | Resources | Work | Actual work |
| --- | --- | --- | --- | --- | --- | --- | --- | --- | --- | --- | --- | --- | --- | --- | --- |
| 28 | 1.4.4.2 | **DAO** |  | 43d? | 2013-06-03 A | 2013-07-31 A | 26, 27 | 100% |  |  |  |  |  | 224h | 224h |
| 29 | 1.4.4.2.1 | DAO для бизнес-объектов |  | 7d | 2013-06-03 A | 2013-06-11 A |  | 100% |  |  |  |  | Валерий Мацукевич | 56h | 56h |
| 30 | 1.4.4.2.2 | DAO для коллекций |  | 13d | 2013-06-12 A | 2013-07-04 A | 29 | 100% |  |  |  |  | Андрей Цветков | 104h | 104h |
| 31 | 1.4.4.2.3 | Функционал системы готов для проведения проектирования интеграции с GUI СМ4 | milestone | 0d | 2013-06-24 A | 2013-06-24 A | 29, 30 | 100% |  |  |  |  |  |  |  |
| 32 | 1.4.4.2.4 | DAO - утилитарные поля |  | 6d | 2013-06-25 A | 2013-07-08 A | 30 | 100% |  |  |  |  | Денис Митавский [50%] | 24h | 24h |
| 33 | 1.4.4.2.5 | DAO - кэш уровня транзакции |  | 5d? | 2013-07-25 A | 2013-07-31 A | 346 | 100% |  |  |  |  | Влад Симоненко | 40h | 40h |
| 34 | 1.4.4.3 | CRUD-сервис для бизнес-объектов |  | 10d | 2013-06-11 A | 2013-06-24 A | 30FF | 100% |  |  |  |  | Андрей Цветков | 80h | 80h |
| 35 | 1.4.4.4 | Расширение CRUD для интеграции с CMJ |  | 5d | 2013-08-08 A | 2013-08-14 A |  | 100% |  |  |  | start no earlier than 2013-08-08 | Андрей Карандей | 40h | 40h |
| 36 | 1.4.4.5 | Поддержка отсортированных дочерних бизнес-объектов |  | 5d | 2013-08-21 | 2013-08-27 | 53 |  |  | 21.14d | 0d |  | Валерий Мацукевич | 40h |  |
| 37 | 1.4.4.6 | Настройка Datasources/Jaas сервера приложений средствами Maven |  | 2d | 2013-07-05 A | 2013-07-08 A | 30 | 100% |  |  |  |  | Сергей Кашанский | 16h | 16h |
| 38 | 1.4.4.7 | Рефакторинг |  | 4d | 2013-07-03 A | 2013-07-08 A | 26 | 100% |  |  |  | start no earlier than 2013-07-03 | Валерий Мацукевич | 32h | 32h |
| 39 | 1.4.4.8 | **Права доступа** |  | 65d | 2013-06-12 A | 2013-09-10 |  | 90% | 6.54d | 186d |  |  |  | 488h | 426.8h |
| 40 | 1.4.4.8.1 | Права - оптимизация хранения (проектирование) |  | 30d | 2013-06-12 A | 2013-07-23 A | 29 | 100% |  |  |  |  | Андрей Пирожков [50%] | 120h | 120h |
| 41 | 1.4.4.8.2 | Описание существующими декларативными средствами конфигурации |  | 19d | 2013-07-16 A | 2013-08-09 A | 40, 19 | 100% |  |  |  |  | Андрей Цветков | 152h | 152h |
| 42 | 1.4.4.8.3 | Автофильтрация |  | 10d | 2013-07-29 A | 2013-08-16 A | 41 | 100% |  |  |  |  | Андрей Цветков | 80h | 80h |
| 43 | 1.4.4.8.4 | Пересчёт прав доступа |  | 17d | 2013-08-19 A | 2013-09-10 | 42 | 55% | 7.65d | 186d |  |  | Андрей Цветков | 136h | 74.8h |
| 44 | 1.4.4.9 | **Workflow - интеграция с Activiti** |  | 91d | 2013-06-07 A | 2013-10-11 A | 14 | 100% |  |  |  |  |  | 344h | 344h |
| 45 | 1.4.4.9.1 | Проектирование |  | 10d | 2013-06-07 A | 2013-07-24 A | 40 | 100% |  |  |  |  | Андрей Пирожков [50%] | 40h | 40h |
| 46 | 1.4.4.9.2 | готова постановка по БП | milestone | 0d | 2013-09-09 A | 2013-09-09 A |  | 100% |  |  |  | start no earlier than 2013-09-09 |  |  |  |
| 47 | 1.4.4.9.3 | Разработка |  | 20d | 2013-09-16 A | 2013-10-11 A | 45, 46 | 100% |  |  |  | start no earlier than 2013-09-16 | (БТЛ) Михаил Ларин | 160h | 160h |
| 48 | 1.4.4.9.4 | **Действия** |  | 18d | 2013-09-18 A | 2013-10-11 A |  | 100% |  |  |  |  |  | 144h | 144h |
| 49 | 1.4.4.9.4.1 | Концепция/Архитектура |  | 4d | 2013-09-18 A | 2013-09-23 A | 374 | 100% |  |  |  | start no earlier than 2013-09-16 | Денис Митавский | 32h | 32h |
| 50 | 1.4.4.9.4.2 | Реализация |  | 14d | 2013-09-24 A | 2013-10-11 A | 49 | 100% |  |  |  |  | (БТЛ) Михаил Ларин | 112h | 112h |
| 51 | 1.4.4.10 | **Наследование ???** |  | 8d | 2013-08-09 A | 2013-08-20 A | 45 | 100% |  |  |  |  | Андрей Пирожков [50%] | 88h | 88h |
| 52 | 1.4.4.10.1 | Проектирование функции "Наследование" |  | 2d | 2013-08-09 A | 2013-08-12 A |  | 100% |  |  |  | finish no earlier than 2013-08-12 | Андрей Пирожков | 16h | 16h |
| 53 | 1.4.4.10.2 | Разработка функции "Наследование" |  | 6d | 2013-08-13 A | 2013-08-20 A | 52 | 100% |  |  |  |  | Валерий Мацукевич | 48h | 48h |

Notes:
- 34: - проектирование базового API / - имплементация
- 36: Для отображени и поддержания заданного порядка следования объектов
- 40: Права доступа - оптимизация подхода, / подбор других названий сущностей (таблицы) переименовать таблицы и улучшить производительность
- 41: Права доступа - описание существующими декларативными средствами конфигурации / (для автоматического создания таблиц) + / конфигурирование под-запроса для фильтрации - там же
- 42: Права доступа - авто-фильтрация / + "внедрение в под-запросы"
- 44: Задачи: / - модель процесса (BPMN) / - Имплементация WF - сервиса , взаимодействие системы с Аctiviti
- 51: Архитектура - форма хранения данных (с учетом производительности) / Наследование типов объектов - уровень DAO

| ID | WBS | Task | Type | Duration | Start | Finish | Predecessors | Complete | Remaining | Total slack | Free slack | Constraint | Resources | Work | Actual work |
| --- | --- | --- | --- | --- | --- | --- | --- | --- | --- | --- | --- | --- | --- | --- | --- |
| 54 | 1.4.4.11 | **Коллекции** |  | 103d | 2013-05-29 A | 2013-10-18 |  | 56% | 45.06d | 158d |  |  |  | 300h | 188h |
| 55 | 1.4.4.11.1 | Коллекции - конфигурация |  | 3d | 2013-05-29 A | 2013-05-31 A |  | 100% |  |  |  |  | Денис Митавский | 24h | 24h |
| 56 | 1.4.4.11.2 | DAO - язык запросов коллекций |  | 12d | 2013-05-29 A | 2013-06-17 A | 55 | 100% |  |  |  |  | Сергей Кашанский; Денис Митавский [50%] | 140h | 140h |
| 57 | 1.4.4.11.3 | Сервис получения и получения счетчиков |  | 3d | 2013-05-29 A | 2013-05-31 A | 55 | 100% |  |  |  |  | Сергей Кашанский | 24h | 24h |
| 58 | 1.4.4.11.4 | Принято решение о работе с ПКД | milestone | 0d | 2013-10-01 | 2013-10-01 |  |  |  | 125d | 0d | start no earlier than 2013-10-01 | Денис Митавский [50%] |  |  |
| 59 | 1.4.4.11.5 | ПКД ???? |  | 14d | 2013-10-01 | 2013-10-18 | 56, 51, 58 |  |  | 125d | 0d |  | Валерий Мацукевич | 112h |  |
| 60 | 1.4.4.12 | **Бизнес-объекты (иерархии доменных объектов)** |  | 56.25d | 2013-07-24 A | 2013-10-10 |  | 90% | 5.79d | 164.75d |  |  |  | 228.8h | 200h |
| 61 | 1.4.4.12.1 | Проектирование |  | 8d | 2013-07-24 A | 2013-08-16 A | 62SF, 52 | 100% |  |  |  |  | Андрей Пирожков [20%] | 12.8h | 12.8h |
| 62 | 1.4.4.12.2 | Реализация1 |  | 3d | 2013-07-31 A | 2013-08-02 A | 372SF | 100% |  |  |  |  | Андрей Пирожков | 24h | 24h |
| 63 | 1.4.4.12.3 | Подготовка описания по обновленным принциапам работы |  | 24d | 2013-08-16 A | 2013-10-10 | 61 | 85% | 3.6d | 164.75d |  |  | Андрей Пирожков | 192h | 163.2h |
| 64 | 1.4.4.13 | **Поиск** |  | 97d | 2013-07-30 A | 2013-12-11 | 34 | 82% | 17.83d | 120d |  |  |  | 464h | 364h |
| 65 | 1.4.4.13.1 | Идея поиска оформлена | milestone | 0d | 2013-09-09 A | 2013-09-09 A |  | 100% |  |  |  | finish no earlier than 2013-09-09 |  |  |  |
| 66 | 1.4.4.13.2 | Поиск |  | 43d | 2013-07-30 A | 2013-11-06 A | 65 | 100% |  |  |  |  | Андрей Пирожков [50%]; Андрей Цветков | 264h | 264h |
| 67 | 1.4.4.13.3 | Полнотекстовый поиск |  | 25d | 2013-11-07 A | 2013-12-11 | 65, 66 | 50% | 12.5d | 120d |  | start no earlier than 2013-11-05 | Андрей Пирожков | 200h | 100h |
| 68 | 1.4.4.14 | **Слой сопряжения CMJ server (CM4)** |  | 225d? | 2013-06-25 A | 2014-05-15 |  | 35% | 146.44d? | 17d |  |  |  | 5110.16h | 2128.24h |
| 69 | 1.4.4.14.1 | Решение принято и ресурсы достуны | milestone | 0d | 2013-08-05 A | 2013-08-05 A |  | 100% |  |  |  | start no earlier than 2013-08-05 |  |  |  |
| 70 | 1.4.4.14.2 | Реализация коннекторов к платформе |  | 97.25d | 2013-08-08 A | 2013-12-23 | 69FS+3d | 29% | 69.25d | 112.75d | 0d |  |  |  |  |
| 71 | 1.4.4.14.3 | Описание решения есть. Можно начинать разработку | milestone | 0d | 2013-08-28 A | 2013-08-28 A |  | 100% |  |  |  | start no earlier than 2013-08-28 |  |  |  |
| 72 | 1.4.4.14.4 | Проработка задания выполнена, можно привлекать разработчиков БТЛ | milestone | 0d | 2013-09-18 A | 2013-09-18 A |  | 100% |  |  |  | start no earlier than 2013-09-18 |  |  |  |
| 73 | 1.4.4.14.5 | Рефакторинг СМ 4.2.1 выполнен | milestone | 0d | 2013-09-30 A | 2013-09-30 A |  | 100% |  |  |  | finish no earlier than 2013-09-30 |  |  |  |
| 74 | 1.4.4.14.6 | Структура хранения определена | milestone | 0d | 2013-10-28 A | 2013-10-28 A |  | 100% |  |  |  | finish no earlier than 2013-10-28 |  |  |  |
| 75 | 1.4.4.14.7 | Проектирование завершено - готовность к интеграции | milestone | 0d | 2013-09-23 | 2013-09-23 |  |  |  | 99.41d | 0d | start no earlier than 2013-09-23 |  |  |  |
| 76 | 1.4.4.14.8 | **Интеграция с CMJ по Внутренним Документам** |  | 99d? | 2013-09-23 A | 2014-02-18 | 75 | 84% | 16.08d? | 17d | 0d |  |  | 2464.24h | 2080.24h |
| 77 | 1.4.4.14.8.1 | MapperBuilder |  | 28d | 2013-09-23 A | 2013-10-30 A |  | 100% |  |  |  | finish no earlier than 2013-10-01 | Александр Власюк | 224h | 224h |
| 78 | 1.4.4.14.8.2 | Уточнение расширенной постановки по MapperBuilder выполнена | milestone | 0d | 2013-09-27 A | 2013-09-27 A |  | 100% |  |  |  | start no earlier than 2013-09-27 | Тугушев Илья [80%] |  |  |
| 79 | 1.4.4.14.8.3 | Конфиг ДОП СС |  | 1d | 2013-09-25 A | 2013-09-26 A |  | 100% |  |  |  |  | Глеб Ноздрачев [1%] | 0.08h | 0.08h |
| 80 | 1.4.4.14.8.4 | Mapper СС |  | 2d | 2013-10-31 A | 2013-11-01 A | 77, 79 | 100% |  |  |  |  | Глеб Ноздрачев [80%] | 12.8h | 12.8h |
| 81 | 1.4.4.14.8.5 | Конфиг ДОП Каталога |  | 3.75d? | 2013-09-24 A | 2013-09-27 A |  | 100% |  |  |  | start no earlier than 2013-09-24 | Глеб Ноздрачев [80%] | 24h | 24h |
| 82 | 1.4.4.14.8.6 | Mapper Каталога |  | 2d | 2013-12-03 A | 2013-12-04 A | 77, 81, 114 | 100% |  |  |  |  | Глеб Ноздрачев [80%] | 12.8h | 12.8h |
| 83 | 1.4.4.14.8.7 | Конфиг ДОП Портала |  | 3d? | 2013-09-25 A | 2013-09-27 A |  | 100% |  |  |  | start no earlier than 2013-09-25 | Евгений Баланенко | 24h | 24h |
| 84 | 1.4.4.14.8.8 | Mapper Портала |  | 2d | 2013-10-31 A | 2013-11-01 A | 77, 83 | 100% |  |  |  |  | Тугушев Илья [80%] | 12.8h | 12.8h |
| 85 | 1.4.4.14.8.9 | Конфиг ДОП СО |  | 1d | 2013-09-23 A | 2013-09-23 A |  | 100% |  |  |  |  | Глеб Ноздрачев [1%] | 0.08h | 0.08h |
| 86 | 1.4.4.14.8.10 | Maper СО |  | 2d | 2013-12-05 A | 2013-12-06 A | 77, 82 | 100% |  |  |  |  | Глеб Ноздрачев [80%] | 12.8h | 12.8h |
| 87 | 1.4.4.14.8.11 | Конфиг ДОП ВнД |  | 2d | 2013-09-27 A | 2013-10-01 A | 81 | 100% |  |  |  |  | Глеб Ноздрачев [80%] | 12.8h | 12.8h |

Notes:
- 56: DAO - язык запросов коллекций
- 57: Коллекции - сервис получения и получения счетчиков
- 58: Используя язык запросов коллеций
- 59: Для поддержания реализации избранного, отметок о прочтении и т.д.
- 67: Включая взаимодействие с Solr
- 70: Начальная реализация модуля "документооборот" - замена лотуса

| ID | WBS | Task | Type | Duration | Start | Finish | Predecessors | Complete | Remaining | Total slack | Free slack | Constraint | Resources | Work | Actual work |
| --- | --- | --- | --- | --- | --- | --- | --- | --- | --- | --- | --- | --- | --- | --- | --- |
| 88 | 1.4.4.14.8.12 | **Mapper ВнД** |  | 9d | 2014-01-27 A | 2014-02-06 | 77, 86 | 93% | 0.68d | 2d |  |  | Александр Власюк | 232h | 156.4h |
| 89 | 1.4.4.14.8.12.1 | Приступили к выполнению антикризисного плана | milestone | 0d | 2014-01-27 A | 2014-01-27 A |  | 100% |  |  |  | start no earlier than 2014-01-27 |  |  |  |
| 90 | 1.4.4.14.8.12.2 | Отладка Маппера Поручения |  | 1d | 2014-01-27 A | 2014-01-27 A | 89 | 100% |  |  |  |  | Александр Власюк | 8h | 8h |
| 91 | 1.4.4.14.8.12.3 | Отладка Маппера исполнения |  | 3d | 2014-01-27 A | 2014-01-29 A | 89 | 100% |  |  |  |  | Александр Власюк | 24h | 24h |
| 92 | 1.4.4.14.8.12.4 | Вспомогательная коллекция "responce" |  | 3d | 2014-01-27 A | 2014-01-29 A | 89 | 100% |  |  |  |  | (БТЛ) Михаил Ларин | 24h | 24h |
| 93 | 1.4.4.14.8.12.5 | Отладка мапперов |  | 4d | 2014-01-30 A | 2014-02-04 A | 90, 91 | 100% |  |  |  |  | Александр Власюк | 32h | 32h |
| 94 | 1.4.4.14.8.12.6 | UI - коллекции (7) |  | 4d | 2014-01-31 A | 2014-02-05 A | 92 | 100% |  |  |  | finish no earlier than 2014-02-05 | (БТЛ) Михаил Ларин | 32h | 32h |
| 95 | 1.4.4.14.8.12.7 | CollectionProvider методы получения только категорий |  | 5d | 2014-01-31 A | 2014-02-06 | 92 | 70% | 1.5d | 2d |  | finish no earlier than 2014-02-06 | (БТЛ) Олег Еренцов | 40h | 28h |
| 96 | 1.4.4.14.8.13 | **Доработка ВнД** |  | 16d | 2014-01-27 A | 2014-02-17 |  | 31% | 10.97d | 18d |  |  |  | 224h | 78h |
| 97 | 1.4.4.14.8.13.1 | Поддержка работы с Вложениями |  | 3d | 2014-02-04 A | 2014-02-06 A | 89 | 100% |  |  |  | finish no earlier than 2014-02-06 | Сергей Околот | 24h | 24h |
| 98 | 1.4.4.14.8.13.2 | Поддержка работы с ReachText |  | 1d | 2014-01-27 A | 2014-01-27 A | 89 | 100% |  |  |  |  | Тугушев Илья | 8h | 8h |
| 99 | 1.4.4.14.8.13.3 | Правила вычисления дправ доступа - реализация |  | 4d | 2014-02-03 A | 2014-02-06 A | 89, 92 | 100% |  |  |  | finish no earlier than 2014-02-06 | (БТЛ) Михаил Ларин | 32h | 32h |
| 100 | 1.4.4.14.8.13.4 | Поддержка полнотекстового поиска |  | 6d | 2014-02-07 | 2014-02-14 | 97 |  |  | 1d |  |  | Сергей Околот | 48h |  |
| 101 | 1.4.4.14.8.13.5 | Базовый сервис поддержки сценариев (+DOEL) |  | 7d | 2014-02-07 | 2014-02-17 | 98, 99 |  |  | 18d |  |  | (БТЛ) Михаил Ларин | 56h |  |
| 102 | 1.4.4.14.8.13.6 | **Перенос Логики работы агентов** |  | 10d | 2014-01-27 A | 2014-02-07 |  | 18% | 8.25d | 24d |  |  |  | 56h | 14h |
| 103 | 1.4.4.14.8.13.6.1 | Подбор варианта реализации |  | 7d | 2014-01-27 A | 2014-02-04 | 89 | 25% | 5.25d | 24d | 0d |  | Андрей Пирожков | 56h | 14h |
| 104 | 1.4.4.14.8.13.6.2 | Реализация и отладка переноса логики |  | 3d | 2014-02-05 | 2014-02-07 | 103 |  |  | 6d |  |  |  |  |  |
| 105 | 1.4.4.14.8.14 | Кофиг ДОП СпО |  | 1d | 2013-09-23 A | 2013-09-23 A |  | 100% |  |  |  |  | Глеб Ноздрачев [1%] | 0.08h | 0.08h |
| 106 | 1.4.4.14.8.15 | Mapper СпО |  | 3d | 2013-11-04 A | 2013-11-06 A | 77, 84 | 100% |  |  |  |  | Тугушев Илья [80%] | 19.2h | 19.2h |
| 107 | 1.4.4.14.8.16 | Аутентификация |  | 5d | 2014-02-04 A | 2014-02-10 A | 110 | 100% |  |  |  | start no earlier than 2014-02-04 | Андрей Карандей | 40h | 40h |
| 108 | 1.4.4.14.8.17 | **Настраиваемые коллекции** |  | 83.25d? | 2013-10-01 A | 2014-02-06 A | 81, 87 | 100% |  |  |  |  |  | 318.4h | 318.4h |
| 109 | 1.4.4.14.8.17.1 | **Системные настройки** |  | 42.25d | 2013-10-01 A | 2013-11-28 A |  | 100% |  |  |  |  |  | 232h | 232h |
| 110 | 1.4.4.14.8.17.1.1 | Builder коллекций |  | 20d | 2013-10-01 A | 2013-10-29 A |  | 100% |  |  |  | start no earlier than 2013-09-30 | Влад Симоненко | 160h | 160h |
| 111 | 1.4.4.14.8.17.1.2 | XSD-схема XML-настроек |  | 3d | 2013-10-29 A | 2013-11-01 A | 110 | 100% |  |  |  |  | Влад Симоненко | 24h | 24h |
| 112 | 1.4.4.14.8.17.1.3 | Чтение XML настроек через спец-Mapper |  | 3d | 2013-11-01 A | 2013-11-06 A | 111 | 100% |  |  |  |  | Влад Симоненко | 24h | 24h |
| 113 | 1.4.4.14.8.17.1.4 | Mapper папок |  | 3d | 2013-11-26 A | 2013-11-28 A |  | 100% |  |  |  | start no earlier than 2013-11-26 | Андрей Карандей | 24h | 24h |

Notes:
- 95: Реализовать в CollectionProvider методы получения только категорий (searchCategory(…)). Фильтрация для получения категорий должна производиться на уровне SQL / CMFIVE-416
- 101: Поддержка вычисления выражений и работы с доменными объектами
- 102: ТО, что выполнялось на лотусе ....
- 107: Кто первый освободится Власюк или Симоненко
- 110: Получение коллекций платформы в соотв. с конфигурацией [MMM] (знать коллекции платформы)
- 111: XSD-схема XML-настроек [NNN] 3дн (знать XML, XSD)
- 112: Чтение через спец-Mapper [NNN] 3дн (уметь работать с XML-парсером)

| ID | WBS | Task | Type | Duration | Start | Finish | Predecessors | Complete | Remaining | Total slack | Constraint | Resources | Work | Actual work |
| --- | --- | --- | --- | --- | --- | --- | --- | --- | --- | --- | --- | --- | --- | --- |
| 114 | 1.4.4.14.8.17.2 | **Конфигурация коллекций (логин)** |  | 10d | 2013-11-29 A | 2013-12-12 A | 87 | 100% |  |  |  |  | 80h | 80h |
| 115 | 1.4.4.14.8.17.2.1 | Типовая иерархия кастомных папок (3шт) |  | 5d | 2013-11-29 A | 2013-12-05 A | 113 | 100% |  |  |  | Андрей Карандей | 40h | 40h |
| 116 | 1.4.4.14.8.17.2.2 | Системные настройки для ВнД |  | 5d | 2013-12-06 A | 2013-12-12 A | 115 | 100% |  |  |  | (БТЛ) Олег Еренцов | 40h | 40h |
| 117 | 1.4.4.14.8.17.3 | Проверка работы |  | 1d? | 2013-12-13 A | 2013-12-13 A | 114, 109 | 100% |  |  |  | Глеб Ноздрачев [80%] | 6.4h | 6.4h |
| 118 | 1.4.4.14.8.17.4 | Конфигурация корневой папки навигатора | milestone | 0d | 2014-02-06 A | 2014-02-06 A |  | 100% |  |  | start no earlier than 2014-02-06 | Глеб Ноздрачев |  |  |
| 119 | 1.4.4.14.8.18 | **Разработка адаптеров для Вн** |  | 21d | 2013-09-30 A | 2013-10-28 |  | 99% | 0d | 0d |  |  | 608h | 608h |
| 120 | 1.4.4.14.8.18.1 | Задание по View и Session поставлена | milestone | 0d | 2013-09-30 A | 2013-09-30 A |  | 100% |  |  | start no earlier than 2013-09-30 | Тугушев Илья [80%] |  |  |
| 121 | 1.4.4.14.8.18.2 | Адаптеры View, Session проектирование |  | 11d | 2013-09-30 A | 2013-10-14 A | 120 | 100% |  |  |  | (БТЛ) Олег Еренцов; (БТЛ)Сергей Степыгин | 176h | 176h |
| 122 | 1.4.4.14.8.18.3 | Разработка логики адаптеров view&session |  | 10d | 2013-10-15 A | 2013-10-28 A | 121 | 100% |  |  |  | (БТЛ) Олег Еренцов; (БТЛ)Сергей Степыгин | 160h | 160h |
| 123 | 1.4.4.14.8.18.4 | Разработка архитектуры дя адаптеров database |  | 5d | 2013-09-30 A | 2013-10-04 A | 120 | 100% |  |  |  | Тугушев Илья [80%] | 32h | 32h |
| 124 | 1.4.4.14.8.18.5 | Разработка адаптеров database |  | 15d | 2013-10-07 A | 2013-10-25 A | 123 | 100% |  |  |  | Александр Власюк | 120h | 120h |
| 125 | 1.4.4.14.8.18.6 | Задание по Database и Document поставлена | milestone | 0d | 2013-10-04 A | 2013-10-04 | 120FS+5d | 90% | 0d | 0d |  | Тугушев Илья [80%] |  |  |
| 126 | 1.4.4.14.8.18.7 | Разработка адаптеров DOCUMENT |  | 15d | 2013-10-07 A | 2013-10-25 A | 123 | 100% |  |  |  | Александр Власюк | 120h | 120h |
| 127 | 1.4.4.14.8.19 | **Разработка коллекций (инициализация)** |  | 56d | 2013-10-29 A | 2014-01-24 | 122 | 99% | 0.28d | 34d |  |  | 472h | 469.6h |
| 128 | 1.4.4.14.8.19.1 | Описание полей документов Вн |  | 2d | 2013-10-29 A | 2013-10-30 A |  | 100% |  |  | finish no earlier than 2013-10-28 | Евгений Баланенко | 16h | 16h |
| 129 | 1.4.4.14.8.19.2 | Коллекции Портала |  | 5d | 2013-10-29 A | 2013-11-04 A | 83 | 100% |  |  |  | Евгений Баланенко | 40h | 40h |
| 130 | 1.4.4.14.8.19.3 | Инструктаж по @-формулам проведен | milestone | 0d | 2013-11-04 A | 2013-11-04 A | 129, 121 | 100% |  |  |  | Тугушев Илья [80%] |  |  |
| 131 | 1.4.4.14.8.19.4 | Коллекции СС |  | 5d | 2013-11-05 A | 2013-11-11 A | 129, 128 | 100% |  |  |  | (БТЛ) Олег Еренцов | 40h | 40h |
| 132 | 1.4.4.14.8.19.5 | Коллекции Каталога |  | 5d | 2013-11-05 A | 2013-11-11 A | 129, 81 | 100% |  |  |  | (БТЛ) Дмитрий Лякин | 40h | 40h |
| 133 | 1.4.4.14.8.19.6 | Коллекции СО |  | 5d | 2013-11-05 A | 2013-11-11 A | 129, 85 | 100% |  |  |  | Тугушев Илья [80%] | 32h | 32h |
| 134 | 1.4.4.14.8.19.7 | Коллекции СпО |  | 6d | 2013-11-12 A | 2013-11-19 A | 132 | 100% |  |  |  | (БТЛ) Дмитрий Лякин | 48h | 48h |
| 135 | 1.4.4.14.8.19.8 | **Разработка коллекций (логин)** |  | 16d | 2013-12-24 A | 2014-01-24 |  | 99% | 0.15d | 34d |  |  | 256h | 253.6h |
| 136 | 1.4.4.14.8.19.8.1 | Инициализация прошла | milestone | 0d | 2013-12-24 A | 2013-12-24 A |  | 100% |  |  | start no earlier than 2013-12-24 |  |  |  |
| 137 | 1.4.4.14.8.19.8.2 | Определение состава коллекций после инициализации Вн |  | 1d | 2013-12-24 A | 2013-12-24 A | 136 | 100% |  |  | finish no earlier than 2013-10-28 | Тугушев Илья | 8h | 8h |
| 138 | 1.4.4.14.8.19.8.3 | Коллекции Портала |  | 5d | 2013-12-24 A | 2014-01-09 A | 136 | 100% |  |  |  | Евгений Баланенко | 40h | 40h |
| 139 | 1.4.4.14.8.19.8.4 | Коллекции СС |  | 5d | 2014-01-10 A | 2014-01-16 A | 137, 138 | 100% |  |  |  | (БТЛ) Олег Еренцов | 40h | 40h |
| 140 | 1.4.4.14.8.19.8.5 | Коллекции Каталога |  | 5d | 2014-01-10 A | 2014-01-16 A | 138 | 100% |  |  |  | (БТЛ) Дмитрий Лякин | 40h | 40h |
| 141 | 1.4.4.14.8.19.8.6 | Коллекции СО |  | 5d | 2014-01-10 A | 2014-01-16 A | 138 | 100% |  |  |  | Тугушев Илья [80%] | 32h | 32h |
| 142 | 1.4.4.14.8.19.8.7 | Коллекции СпО |  | 6d | 2014-01-17 A | 2014-01-24 A | 140 | 100% |  |  |  | (БТЛ) Дмитрий Лякин | 48h | 48h |
| 143 | 1.4.4.14.8.19.8.8 | Коллекции ВнД |  | 6d | 2014-01-17 A | 2014-01-24 | 139 | 95% | 0.3d | 34d |  | (БТЛ) Олег Еренцов | 48h | 45.6h |
| 144 | 1.4.4.14.8.20 | ВнД | milestone | 0d | 2014-02-10 | 2014-02-10 | 131, 80, 132, 82, 129, 84, 133, 86, 88, 134, 106, 107, 108, 121 |  |  | 0d |  |  |  |  |

Notes:
- 116: Системные настройки для ВнД (1дескр + 10типов) [NNN] 1 дн
- 117: Х тестовых РКК ВнД [YYY] 2ч
- 128: - документ, описывающий соответствие нотес-полей полям ДОП для модуля ВнД
- 137: - документ, описывающий соответствие нотес-полей полям ДОП для модуля ВнД

| ID | WBS | Task | Type | Duration | Start | Finish | Predecessors | Complete | Remaining | Total slack | Free slack | Constraint | Resources | Work | Actual work |
| --- | --- | --- | --- | --- | --- | --- | --- | --- | --- | --- | --- | --- | --- | --- | --- |
| 145 | 1.4.4.14.8.21 | **Преобразование структуры зранения для Поруч и Исп.** |  | 5d | 2014-02-12 | 2014-02-18 |  |  |  | 17d |  |  |  |  |  |
| 146 | 1.4.4.14.8.21.1 | Принято решение по упрощению ДОП | milestone | 0d | 2014-02-12 | 2014-02-12 |  |  |  | 22d |  | start no earlier than 2014-02-12 |  |  |  |
| 147 | 1.4.4.14.8.21.2 | Адаптация ДОП |  | 2d | 2014-02-12 | 2014-02-13 | 146 |  |  | 17d |  |  |  |  |  |
| 148 | 1.4.4.14.8.21.3 | Адаптация коллекций |  | 3d | 2014-02-14 | 2014-02-18 | 147 |  |  | 17d |  |  |  |  |  |
| 149 | 1.4.4.14.8.22 | **Адаптация CMJ-server** |  | 2d | 2014-02-11 A | 2014-02-12 | 144 | 50% | 1d | 21d |  |  |  | 32h | 16h |
| 150 | 1.4.4.14.8.22.1 | Подмена РБД для CMJ-Server |  | 2d | 2014-02-11 A | 2014-02-12 A |  | 100% |  |  |  |  | Андрей Карандей | 16h | 16h |
| 151 | 1.4.4.14.8.22.2 | Имплементация аналогов @-функций для Sochi-server |  | 2d | 2014-02-11 | 2014-02-12 |  |  |  | 21d |  |  | (БТЛ) Михаил Ларин | 16h |  |
| 152 | 1.4.4.14.8.23 | Объединение War |  | 1d | 2014-02-11 A | 2014-02-11 A | 144 | 100% |  |  |  |  | Тугушев Илья | 8h | 8h |
| 153 | 1.4.4.14.8.24 | **Инструмент заполнения** |  | 4d? | 2014-02-11 A | 2014-02-14 | 144 | 18% | 3.27d? | 19d |  |  |  | 174.4h | 30.4h |
| 154 | 1.4.4.14.8.24.1 | **Заливка данных для демонстрации** |  | 4d | 2014-02-11 A | 2014-02-14 A |  | 100% |  |  |  |  |  | 30.4h | 30.4h |
| 155 | 1.4.4.14.8.24.1.1 | Подготовка задачи |  | 1d | 2014-02-11 A | 2014-02-11 A |  | 100% |  |  |  |  | Тугушев Илья [80%] | 6.4h | 6.4h |
| 156 | 1.4.4.14.8.24.1.2 | Написание скриптов заливки |  | 3d | 2014-02-12 A | 2014-02-14 A | 155 | 100% |  |  |  |  | Евгений Сафроненко | 24h | 24h |
| 157 | 1.4.4.14.8.24.2 | Инструмент заполнения Каталога |  | 3d? | 2014-02-11 | 2014-02-13 |  |  |  | 20d |  |  | Евгений Сафроненко | 24h |  |
| 158 | 1.4.4.14.8.24.3 | Инструмент заполнения СС |  | 3d? | 2014-02-11 | 2014-02-13 |  |  |  | 20d |  |  | Евгений Сафроненко | 24h |  |
| 159 | 1.4.4.14.8.24.4 | Инструмент заполнения Портала |  | 3d? | 2014-02-11 | 2014-02-13 |  |  |  | 20d |  |  | Евгений Сафроненко | 24h |  |
| 160 | 1.4.4.14.8.24.5 | Инструмент заполнения СО |  | 3d? | 2014-02-11 | 2014-02-13 |  |  |  | 20d |  |  | Евгений Сафроненко | 24h |  |
| 161 | 1.4.4.14.8.24.6 | Инструмент заполнения СпО |  | 3d? | 2014-02-11 | 2014-02-13 |  |  |  | 20d |  |  | Евгений Сафроненко | 24h |  |
| 162 | 1.4.4.14.8.24.7 | Проверка заполнения |  | 3d | 2014-02-11 | 2014-02-13 |  |  |  | 20d |  |  | Тимофей Щербатый | 24h |  |
| 163 | 1.4.4.14.9 | **Интеграция с CMJ по Входящим документам** |  | 23d | 2014-02-12 | 2014-03-14 |  |  |  | 61d |  |  |  | 382.4h |  |
| 164 | 1.4.4.14.9.1 | Задание выдано | milestone | 0d | 2014-02-12 | 2014-02-12 |  |  |  | 61d | 0d | start no earlier than 2014-02-12 | Тугушев Илья |  |  |
| 165 | 1.4.4.14.9.2 | Конфиг ДОП |  | 6d | 2014-02-12 | 2014-02-19 | 164 |  |  | 61d | 0d |  | Глеб Ноздрачев | 48h |  |
| 166 | 1.4.4.14.9.3 | Mapper |  | 4.8d | 2014-02-20 | 2014-02-26 | 165 |  |  | 62.2d | 0d |  | Александр Власюк | 38.4h |  |
| 167 | 1.4.4.14.9.4 | **Перенос логики сервисов по вхД** |  | 11d | 2014-02-26 | 2014-03-13 |  |  |  | 62.2d |  |  |  | 88h |  |
| 168 | 1.4.4.14.9.4.1 | Задача поставлена |  | 1d | 2014-02-26 | 2014-02-27 | 164, 166 |  |  | 62.2d | 0d |  | Тугушев Илья | 8h |  |
| 169 | 1.4.4.14.9.4.2 | Пролведение процедуры Revers Engineering |  | 5d | 2014-02-27 | 2014-03-06 | 168 |  |  | 62.2d | 0d |  | Наталья Смолянец (Смолянец) | 40h |  |
| 170 | 1.4.4.14.9.4.3 | Реализация в слое CMJ-CMSochi |  | 5d | 2014-03-06 | 2014-03-13 | 169 |  |  | 62.2d |  |  | Антон Ганчев (Киев) | 40h |  |

Notes:
- 169: Пролведение процедуры Revers Engineering и составлене алгоритма функционирования
- 170: Пнренос логики на java

| ID | WBS | Task | Type | Duration | Start | Finish | Predecessors | Complete | Remaining | Total slack | Free slack | Constraint | Resources | Work | Actual work |
| --- | --- | --- | --- | --- | --- | --- | --- | --- | --- | --- | --- | --- | --- | --- | --- |
| 171 | 1.4.4.14.9.5 | **Разработка коллекций** |  | 17d | 2014-02-20 | 2014-03-14 | 165 |  |  | 61d | 0d |  |  | 208h |  |
| 172 | 1.4.4.14.9.5.1 | Коллекции внутрисистемные |  | 9d | 2014-02-20 | 2014-03-04 | 165 |  |  | 69d |  |  | (БТЛ)Сергей Степыгин | 72h |  |
| 173 | 1.4.4.14.9.5.2 | Коллекции GUI |  | 10d | 2014-02-20 | 2014-03-05 | 165 |  |  | 61d | 0d |  | (БТЛ) Дмитрий Лякин | 80h |  |
| 174 | 1.4.4.14.9.5.3 | **Настраиваемые коллекции** |  | 4d | 2014-03-06 | 2014-03-11 | 173 |  |  | 61d | 3d |  |  | 32h |  |
| 175 | 1.4.4.14.9.5.3.1 | **Конфигурация коллекций** |  | 4d | 2014-03-06 | 2014-03-11 |  |  |  | 61d | 0d |  |  | 32h |  |
| 176 | 1.4.4.14.9.5.3.1.1 | Типовая иерархия кастомных папок (3шт) |  | 2d | 2014-03-06 | 2014-03-07 |  |  |  | 61d | 0d |  | (БТЛ) Олег Еренцов | 16h |  |
| 177 | 1.4.4.14.9.5.3.1.2 | Системные настройки для Вх |  | 2d | 2014-03-10 | 2014-03-11 | 176 |  |  | 61d |  |  | (БТЛ) Олег Еренцов | 16h |  |
| 178 | 1.4.4.14.9.5.4 | Проверка работы |  | 3d | 2014-03-12 | 2014-03-14 | 175 |  |  | 61d |  |  | (БТЛ) Олег Еренцов | 24h |  |
| 179 | 1.4.4.14.9.6 | Интеграция по Вх выполнена | milestone | 0d | 2014-03-14 | 2014-03-14 | 166, 174, 172, 171 |  |  | 61d |  |  |  |  |  |
| 180 | 1.4.4.14.10 | **Интеграция с CMJ по Договорам** |  | 30d | 2013-10-15 A | 2013-11-25 |  | 15% | 25.38d | 132d |  |  |  | 296h | 48h |
| 181 | 1.4.4.14.10.1 | Определен исполнитель по составлению конфигураций | milestone | 0d | 2013-10-15 | 2013-10-15 |  |  |  | 160d | 1d | start no earlier than 2013-10-15 |  |  |  |
| 182 | 1.4.4.14.10.2 | Проектирование и получение оценки работ |  | 2d | 2013-10-16 | 2013-10-17 | 181 |  |  | 159d |  | start no earlier than 2013-10-16 |  |  |  |
| 183 | 1.4.4.14.10.3 | Конфиг ДОП |  | 6d | 2013-10-15 A | 2013-10-22 A | 181 | 100% |  |  |  |  | Евгений Баланенко | 48h | 48h |
| 184 | 1.4.4.14.10.4 | Mapper |  | 5d | 2013-10-23 | 2013-10-29 | 183 |  |  | 132d | 0d |  | Евгений Баланенко | 40h |  |
| 185 | 1.4.4.14.10.5 | **Настраиваемые коллекции** |  | 7d | 2013-10-30 | 2013-11-07 | 184 |  |  | 144d | 12d |  |  | 56h |  |
| 186 | 1.4.4.14.10.5.1 | **Конфигурация коллекций** |  | 6d | 2013-10-30 | 2013-11-06 |  |  |  | 144d | 0d |  |  | 48h |  |
| 187 | 1.4.4.14.10.5.1.1 | Типовая иерархия кастомных папок (3шт) |  | 4d | 2013-10-30 | 2013-11-04 |  |  |  | 144d | 0d |  | Евгений Баланенко | 32h |  |
| 188 | 1.4.4.14.10.5.1.2 | Системные настройки для Дгв |  | 2d | 2013-11-05 | 2013-11-06 | 187 |  |  | 144d |  |  | Евгений Баланенко | 16h |  |
| 189 | 1.4.4.14.10.5.2 | Проверка работы |  | 1d | 2013-11-07 | 2013-11-07 | 186 |  |  | 144d | 0d |  | Евгений Баланенко | 8h |  |
| 190 | 1.4.4.14.10.5.3 | Конфигурация для модуля "Договора" получена | milestone | 0d | 2013-11-07 | 2013-11-07 | 189 |  |  | 144d |  |  |  |  |  |
| 191 | 1.4.4.14.10.6 | **Разработка адаптеров для Дгв** |  | 10d | 2013-10-29 | 2013-11-12 | 184 |  |  | 132d | 0d |  |  | 80h |  |
| 192 | 1.4.4.14.10.6.1 | Задание поставлено | milestone | 0d | 2013-10-29 | 2013-10-29 |  |  |  | 132d | 0d | start no earlier than 2013-09-30 | Тугушев Илья [80%] |  |  |
| 193 | 1.4.4.14.10.6.2 | Разработка архитектуры дя адаптеров |  | 5d | 2013-10-30 | 2013-11-05 | 192 |  |  | 132d | 0d |  | (БТЛ) Олег Еренцов | 40h |  |
| 194 | 1.4.4.14.10.6.3 | Разработка адаптеров |  | 5d | 2013-11-06 | 2013-11-12 | 193 |  |  | 132d |  |  | (БТЛ) Олег Еренцов | 40h |  |

Notes:
- 177: Системные настройки для ВнД (1дескр + 10типов) [NNN] 1 дн
- 178: Х тестовых РКК ВнД [YYY] 2ч
- 188: Системные настройки для ВнД (1дескр + 10типов) [NNN] 1 дн
- 189: Х тестовых РКК ВнД [YYY] 2ч

| ID | WBS | Task | Type | Duration | Start | Finish | Predecessors | Total slack | Free slack | Constraint | Resources | Work |
| --- | --- | --- | --- | --- | --- | --- | --- | --- | --- | --- | --- | --- |
| 195 | 1.4.4.14.10.7 | **Разработка коллекций** |  | 9d | 2013-11-13 | 2013-11-25 | 191 | 132d |  |  |  | 72h |
| 196 | 1.4.4.14.10.7.1 | Коллекции |  | 9d | 2013-11-13 | 2013-11-25 |  | 132d | 0d |  | (БТЛ) Олег Еренцов | 72h |
| 197 | 1.4.4.14.10.8 | Интеграция по Дгв выполнена | milestone | 0d | 2013-11-25 | 2013-11-25 | 184, 185, 196 | 132d |  |  |  |  |
| 198 | 1.4.4.14.11 | **Интеграция с CMJ по ОРД** |  | 31d? | 2014-02-19 | 2014-04-02 | 76 | 48d |  |  |  | 214.88h |
| 199 | 1.4.4.14.11.1 | Конфиг ДОП |  | 6d | 2014-02-19 | 2014-02-26 |  | 48d | 0d |  | Глеб Ноздрачев [1%] | 0.48h |
| 200 | 1.4.4.14.11.2 | Mapper |  | 6d | 2014-02-27 | 2014-03-06 | 199 | 48d | 0d |  | Глеб Ноздрачев [80%] | 38.4h |
| 201 | 1.4.4.14.11.3 | **Настраиваемые коллекции** |  | 5d? | 2014-03-07 | 2014-03-13 | 200 | 62d | 14d |  |  | 32h |
| 202 | 1.4.4.14.11.3.1 | **Конфигурация коллекций** |  | 4d | 2014-03-07 | 2014-03-12 |  | 62d | 0d |  |  | 25.6h |
| 203 | 1.4.4.14.11.3.1.1 | Типовая иерархия кастомных папок (3шт) |  | 2d | 2014-03-07 | 2014-03-10 |  | 62d | 0d |  | Глеб Ноздрачев [80%] | 12.8h |
| 204 | 1.4.4.14.11.3.1.2 | Системные настройки для ОРД |  | 2d | 2014-03-11 | 2014-03-12 | 203 | 62d |  |  | Глеб Ноздрачев [80%] | 12.8h |
| 205 | 1.4.4.14.11.3.2 | Проверка работы |  | 1d? | 2014-03-13 | 2014-03-13 | 202 | 62d |  |  | Глеб Ноздрачев [80%] | 6.4h |
| 206 | 1.4.4.14.11.4 | **Разработка адаптеров для ОРД** |  | 10d | 2014-03-06 | 2014-03-20 | 200 | 48d | 0d |  |  | 72h |
| 207 | 1.4.4.14.11.4.1 | Задание поставлено | milestone | 0d | 2014-03-06 | 2014-03-06 |  | 48d | 0d | start no earlier than 2013-09-30 | Тугушев Илья [80%] |  |
| 208 | 1.4.4.14.11.4.2 | Разработка архитектуры дя адаптеров |  | 5d | 2014-03-07 | 2014-03-13 | 207 | 48d | 0d |  | Тугушев Илья [80%] | 32h |
| 209 | 1.4.4.14.11.4.3 | Разработка адаптеров |  | 5d | 2014-03-14 | 2014-03-20 | 208 | 48d |  |  | Александр Власюк | 40h |
| 210 | 1.4.4.14.11.5 | **Разработка коллекций** |  | 9d | 2014-03-21 | 2014-04-02 | 206 | 48d |  |  |  | 72h |
| 211 | 1.4.4.14.11.5.1 | Коллекции |  | 9d | 2014-03-21 | 2014-04-02 |  | 48d | 0d |  | (БТЛ) Олег Еренцов | 72h |
| 212 | 1.4.4.14.11.6 | Интеграция по ОРД выполнена | milestone | 0d | 2014-04-02 | 2014-04-02 | 200, 201, 211 | 48d |  |  |  |  |
| 213 | 1.4.4.14.12 | **Интеграция с CMJ по "Кейсам"** |  | 31d? | 2014-02-19 | 2014-04-02 | 76 | 48d |  |  |  | 214.88h |
| 214 | 1.4.4.14.12.1 | Конфиг ДОП |  | 6d | 2014-02-19 | 2014-02-26 |  | 48d | 0d |  | Глеб Ноздрачев [1%] | 0.48h |
| 215 | 1.4.4.14.12.2 | Mapper |  | 6d | 2014-02-27 | 2014-03-06 | 214 | 48d | 0d |  | Глеб Ноздрачев [80%] | 38.4h |
| 216 | 1.4.4.14.12.3 | **Настраиваемые коллекции** |  | 5d? | 2014-03-07 | 2014-03-13 | 215 | 62d | 14d |  |  | 32h |
| 217 | 1.4.4.14.12.3.1 | **Конфигурация коллекций** |  | 4d | 2014-03-07 | 2014-03-12 |  | 62d | 0d |  |  | 25.6h |
| 218 | 1.4.4.14.12.3.1.1 | Типовая иерархия кастомных папок (3шт) |  | 2d | 2014-03-07 | 2014-03-10 |  | 62d | 0d |  | Глеб Ноздрачев [80%] | 12.8h |
| 219 | 1.4.4.14.12.3.1.2 | Системные настройки для Кейс |  | 2d | 2014-03-11 | 2014-03-12 | 218 | 62d |  |  | Глеб Ноздрачев [80%] | 12.8h |
| 220 | 1.4.4.14.12.3.2 | Проверка работы |  | 1d? | 2014-03-13 | 2014-03-13 | 217 | 62d |  |  | Глеб Ноздрачев [80%] | 6.4h |

Notes:
- 204: Системные настройки для ВнД (1дескр + 10типов) [NNN] 1 дн
- 205: Х тестовых РКК ВнД [YYY] 2ч
- 219: Системные настройки для ВнД (1дескр + 10типов) [NNN] 1 дн
- 220: Х тестовых РКК ВнД [YYY] 2ч

| ID | WBS | Task | Type | Duration | Start | Finish | Predecessors | Total slack | Free slack | Constraint | Resources | Work |
| --- | --- | --- | --- | --- | --- | --- | --- | --- | --- | --- | --- | --- |
| 221 | 1.4.4.14.12.4 | **Разработка адаптеров для Кейс** |  | 10d | 2014-03-06 | 2014-03-20 | 215 | 48d | 0d |  |  | 72h |
| 222 | 1.4.4.14.12.4.1 | Задание поставлено | milestone | 0d | 2014-03-06 | 2014-03-06 |  | 48d | 0d | start no earlier than 2013-09-30 | Тугушев Илья [80%] |  |
| 223 | 1.4.4.14.12.4.2 | Разработка архитектуры дя адаптеров |  | 5d | 2014-03-07 | 2014-03-13 | 222 | 48d | 0d |  | Тугушев Илья [80%] | 32h |
| 224 | 1.4.4.14.12.4.3 | Разработка адаптеров |  | 5d | 2014-03-14 | 2014-03-20 | 223 | 48d |  |  | Александр Власюк | 40h |
| 225 | 1.4.4.14.12.5 | **Разработка коллекций** |  | 9d | 2014-03-21 | 2014-04-02 | 221 | 48d |  |  |  | 72h |
| 226 | 1.4.4.14.12.5.1 | Коллекции |  | 9d | 2014-03-21 | 2014-04-02 |  | 48d | 0d |  | (БТЛ) Олег Еренцов | 72h |
| 227 | 1.4.4.14.12.6 | Интеграция по Кейс выполнена | milestone | 0d | 2014-04-02 | 2014-04-02 | 215, 216, 226 | 48d |  |  |  |  |
| 228 | 1.4.4.14.13 | **Интеграция с CMJ по Исходящие документам** |  | 31d? | 2014-02-11 | 2014-03-25 | 144 | 54d |  |  |  | 214.88h |
| 229 | 1.4.4.14.13.1 | Конфиг ДОП |  | 6d | 2014-02-11 | 2014-02-18 |  | 54d | 0d |  | Глеб Ноздрачев [1%] | 0.48h |
| 230 | 1.4.4.14.13.2 | Mapper |  | 6d | 2014-02-19 | 2014-02-26 | 229 | 54d | 0d |  | Глеб Ноздрачев [80%] | 38.4h |
| 231 | 1.4.4.14.13.3 | **Настраиваемые коллекции** |  | 5d? | 2014-02-27 | 2014-03-05 | 230 | 68d | 14d |  |  | 32h |
| 232 | 1.4.4.14.13.3.1 | **Конфигурация коллекций** |  | 4d | 2014-02-27 | 2014-03-04 |  | 68d | 0d |  |  | 25.6h |
| 233 | 1.4.4.14.13.3.1.1 | Типовая иерархия кастомных папок (3шт) |  | 2d | 2014-02-27 | 2014-02-28 |  | 68d | 0d |  | Глеб Ноздрачев [80%] | 12.8h |
| 234 | 1.4.4.14.13.3.1.2 | Системные настройки для Исх |  | 2d | 2014-03-03 | 2014-03-04 | 233 | 68d |  |  | Глеб Ноздрачев [80%] | 12.8h |
| 235 | 1.4.4.14.13.3.2 | Проверка работы |  | 1d? | 2014-03-05 | 2014-03-05 | 232 | 68d |  |  | Глеб Ноздрачев [80%] | 6.4h |
| 236 | 1.4.4.14.13.4 | **Разработка адаптеров для Исх** |  | 10d | 2014-02-26 | 2014-03-12 | 230 | 54d | 0d |  |  | 72h |
| 237 | 1.4.4.14.13.4.1 | Задание поставлено | milestone | 0d | 2014-02-26 | 2014-02-26 |  | 54d | 0d | start no earlier than 2013-09-30 | Тугушев Илья [80%] |  |
| 238 | 1.4.4.14.13.4.2 | Разработка архитектуры дя адаптеров |  | 5d | 2014-02-27 | 2014-03-05 | 237 | 54d | 0d |  | Тугушев Илья [80%] | 32h |
| 239 | 1.4.4.14.13.4.3 | Разработка адаптеров |  | 5d | 2014-03-06 | 2014-03-12 | 238 | 54d |  |  | Александр Власюк | 40h |
| 240 | 1.4.4.14.13.5 | **Разработка коллекций** |  | 9d | 2014-03-13 | 2014-03-25 | 236 | 54d |  |  |  | 72h |
| 241 | 1.4.4.14.13.5.1 | Коллекции |  | 9d | 2014-03-13 | 2014-03-25 |  | 54d | 0d |  | (БТЛ) Олег Еренцов | 72h |
| 242 | 1.4.4.14.13.6 | Интеграция по Исх выполнена | milestone | 0d | 2014-03-25 | 2014-03-25 | 230, 231, 241 | 54d |  |  |  |  |
| 243 | 1.4.4.14.14 | **Интеграция с CMJ по самостоятельным поручениям** |  | 31d? | 2014-02-19 | 2014-04-02 | 76 | 48d |  |  |  | 214.88h |
| 244 | 1.4.4.14.14.1 | Конфиг ДОП |  | 6d | 2014-02-19 | 2014-02-26 |  | 48d | 0d |  | Глеб Ноздрачев [1%] | 0.48h |
| 245 | 1.4.4.14.14.2 | Mapper |  | 6d | 2014-02-27 | 2014-03-06 | 244 | 48d | 0d |  | Глеб Ноздрачев [80%] | 38.4h |

Notes:
- 234: Системные настройки для ВнД (1дескр + 10типов) [NNN] 1 дн
- 235: Х тестовых РКК ВнД [YYY] 2ч

| ID | WBS | Task | Type | Duration | Start | Finish | Predecessors | Total slack | Free slack | Constraint | Resources | Work |
| --- | --- | --- | --- | --- | --- | --- | --- | --- | --- | --- | --- | --- |
| 246 | 1.4.4.14.14.3 | **Настраиваемые коллекции** |  | 5d? | 2014-03-07 | 2014-03-13 | 245 | 62d | 14d |  |  | 32h |
| 247 | 1.4.4.14.14.3.1 | **Конфигурация коллекций** |  | 4d | 2014-03-07 | 2014-03-12 |  | 62d | 0d |  |  | 25.6h |
| 248 | 1.4.4.14.14.3.1.1 | Типовая иерархия кастомных папок (3шт) |  | 2d | 2014-03-07 | 2014-03-10 |  | 62d | 0d |  | Глеб Ноздрачев [80%] | 12.8h |
| 249 | 1.4.4.14.14.3.1.2 | Системные настройки для Поручений |  | 2d | 2014-03-11 | 2014-03-12 | 248 | 62d |  |  | Глеб Ноздрачев [80%] | 12.8h |
| 250 | 1.4.4.14.14.3.2 | Проверка работы |  | 1d? | 2014-03-13 | 2014-03-13 | 247 | 62d |  |  | Глеб Ноздрачев [80%] | 6.4h |
| 251 | 1.4.4.14.14.4 | **Разработка адаптеров для Поручений** |  | 10d | 2014-03-06 | 2014-03-20 | 245 | 48d | 0d |  |  | 72h |
| 252 | 1.4.4.14.14.4.1 | Задание поставлено | milestone | 0d | 2014-03-06 | 2014-03-06 |  | 48d | 0d | start no earlier than 2013-09-30 | Тугушев Илья [80%] |  |
| 253 | 1.4.4.14.14.4.2 | Разработка архитектуры дя адаптеров |  | 5d | 2014-03-07 | 2014-03-13 | 252 | 48d | 0d |  | Тугушев Илья [80%] | 32h |
| 254 | 1.4.4.14.14.4.3 | Разработка адаптеров |  | 5d | 2014-03-14 | 2014-03-20 | 253 | 48d |  |  | Александр Власюк | 40h |
| 255 | 1.4.4.14.14.5 | **Разработка коллекций** |  | 9d | 2014-03-21 | 2014-04-02 | 251 | 48d |  |  |  | 72h |
| 256 | 1.4.4.14.14.5.1 | Коллекции |  | 9d | 2014-03-21 | 2014-04-02 |  | 48d | 0d |  | (БТЛ) Олег Еренцов | 72h |
| 257 | 1.4.4.14.14.6 | Интеграция по Поручений выполнена | milestone | 0d | 2014-04-02 | 2014-04-02 | 245, 246, 256 | 48d |  |  |  |  |
| 258 | 1.4.4.14.15 | **Интеграция с CMJ по ОГ** |  | 31d? | 2014-02-19 | 2014-04-02 | 76 | 48d |  |  |  | 214.88h |
| 259 | 1.4.4.14.15.1 | Конфиг ДОП |  | 6d | 2014-02-19 | 2014-02-26 |  | 48d | 0d |  | Глеб Ноздрачев [1%] | 0.48h |
| 260 | 1.4.4.14.15.2 | Mapper |  | 6d | 2014-02-27 | 2014-03-06 | 259 | 48d | 0d |  | Глеб Ноздрачев [80%] | 38.4h |
| 261 | 1.4.4.14.15.3 | **Настраиваемые коллекции** |  | 5d? | 2014-03-07 | 2014-03-13 | 260 | 62d | 14d |  |  | 32h |
| 262 | 1.4.4.14.15.3.1 | **Конфигурация коллекций** |  | 4d | 2014-03-07 | 2014-03-12 |  | 62d | 0d |  |  | 25.6h |
| 263 | 1.4.4.14.15.3.1.1 | Типовая иерархия кастомных папок (3шт) |  | 2d | 2014-03-07 | 2014-03-10 |  | 62d | 0d |  | Глеб Ноздрачев [80%] | 12.8h |
| 264 | 1.4.4.14.15.3.1.2 | Системные настройки для ОГ |  | 2d | 2014-03-11 | 2014-03-12 | 263 | 62d |  |  | Глеб Ноздрачев [80%] | 12.8h |
| 265 | 1.4.4.14.15.3.2 | Проверка работы |  | 1d? | 2014-03-13 | 2014-03-13 | 262 | 62d |  |  | Глеб Ноздрачев [80%] | 6.4h |
| 266 | 1.4.4.14.15.4 | **Разработка адаптеров для ОГ** |  | 10d | 2014-03-06 | 2014-03-20 | 260 | 48d | 0d |  |  | 72h |
| 267 | 1.4.4.14.15.4.1 | Задание поставлено | milestone | 0d | 2014-03-06 | 2014-03-06 |  | 48d | 0d | start no earlier than 2013-09-30 | Тугушев Илья [80%] |  |
| 268 | 1.4.4.14.15.4.2 | Разработка архитектуры дя адаптеров |  | 5d | 2014-03-07 | 2014-03-13 | 267 | 48d | 0d |  | Тугушев Илья [80%] | 32h |
| 269 | 1.4.4.14.15.4.3 | Разработка адаптеров |  | 5d | 2014-03-14 | 2014-03-20 | 268 | 48d |  |  | Александр Власюк | 40h |

Notes:
- 249: Системные настройки для ВнД (1дескр + 10типов) [NNN] 1 дн
- 250: Х тестовых РКК ВнД [YYY] 2ч
- 264: Системные настройки для ВнД (1дескр + 10типов) [NNN] 1 дн
- 265: Х тестовых РКК ВнД [YYY] 2ч

| ID | WBS | Task | Type | Duration | Start | Finish | Predecessors | Total slack | Free slack | Constraint | Resources | Work |
| --- | --- | --- | --- | --- | --- | --- | --- | --- | --- | --- | --- | --- |
| 270 | 1.4.4.14.15.5 | **Разработка коллекций** |  | 9d | 2014-03-21 | 2014-04-02 | 266 | 48d |  |  |  | 72h |
| 271 | 1.4.4.14.15.5.1 | Коллекции |  | 9d | 2014-03-21 | 2014-04-02 |  | 48d | 0d |  | (БТЛ) Олег Еренцов | 72h |
| 272 | 1.4.4.14.15.6 | Интеграция по ОГ выполнена | milestone | 0d | 2014-04-02 | 2014-04-02 | 260, 261, 271 | 48d |  |  |  |  |
| 273 | 1.4.4.14.16 | **Интеграция с CMJ по сервису согласования** |  | 31d? | 2014-02-18 | 2014-04-02 | 76 | 17d | 0d |  |  | 214.88h |
| 274 | 1.4.4.14.16.1 | Получена версия CM4.X c WF движком | milestone | 0d | 2014-02-18 | 2014-02-18 |  | 17d | 0d | start no earlier than 2013-11-27 |  |  |
| 275 | 1.4.4.14.16.2 | Конфиг ДОП |  | 6d | 2014-02-19 | 2014-02-26 | 274 | 17d | 0d |  | Глеб Ноздрачев [1%] | 0.48h |
| 276 | 1.4.4.14.16.3 | Mapper |  | 6d | 2014-02-27 | 2014-03-06 | 275 | 17d | 0d |  | Глеб Ноздрачев [80%] | 38.4h |
| 277 | 1.4.4.14.16.4 | **Настраиваемые коллекции** |  | 5d? | 2014-03-07 | 2014-03-13 | 276 | 31d | 14d |  |  | 32h |
| 278 | 1.4.4.14.16.4.1 | **Конфигурация коллекций** |  | 4d | 2014-03-07 | 2014-03-12 |  | 31d | 0d |  |  | 25.6h |
| 279 | 1.4.4.14.16.4.1.1 | Типовая иерархия кастомных папок (3шт) |  | 2d | 2014-03-07 | 2014-03-10 |  | 31d | 0d |  | Глеб Ноздрачев [80%] | 12.8h |
| 280 | 1.4.4.14.16.4.1.2 | Системные настройки для СрвСогл |  | 2d | 2014-03-11 | 2014-03-12 | 279 | 31d |  |  | Глеб Ноздрачев [80%] | 12.8h |
| 281 | 1.4.4.14.16.4.2 | Проверка работы |  | 1d? | 2014-03-13 | 2014-03-13 | 278 | 31d |  |  | Глеб Ноздрачев [80%] | 6.4h |
| 282 | 1.4.4.14.16.5 | **Разработка адаптеров для СрвСогл** |  | 10d | 2014-03-06 | 2014-03-20 | 276 | 17d | 0d |  |  | 72h |
| 283 | 1.4.4.14.16.5.1 | Задание поставлено | milestone | 0d | 2014-03-06 | 2014-03-06 |  | 17d | 0d | start no earlier than 2013-09-30 | Тугушев Илья [80%] |  |
| 284 | 1.4.4.14.16.5.2 | Разработка архитектуры дя адаптеров |  | 5d | 2014-03-07 | 2014-03-13 | 283 | 17d | 0d |  | Тугушев Илья [80%] | 32h |
| 285 | 1.4.4.14.16.5.3 | Разработка адаптеров |  | 5d | 2014-03-14 | 2014-03-20 | 284 | 17d |  |  | Александр Власюк | 40h |
| 286 | 1.4.4.14.16.6 | **Разработка коллекций** |  | 9d | 2014-03-21 | 2014-04-02 | 282 | 17d |  |  |  | 72h |
| 287 | 1.4.4.14.16.6.1 | Коллекции |  | 9d | 2014-03-21 | 2014-04-02 |  | 17d | 0d |  | (БТЛ) Олег Еренцов | 72h |
| 288 | 1.4.4.14.16.7 | Интеграция по СрвСогл выполнена | milestone | 0d | 2014-04-02 | 2014-04-02 | 276, 277, 287 | 17d |  |  |  |  |
| 289 | 1.4.4.14.17 | **Интеграция с CMJ по Заседаниям** |  | 31d? | 2014-04-03 | 2014-05-15 | 76, 273 | 17d |  |  |  | 214.88h |
| 290 | 1.4.4.14.17.1 | Конфиг ДОП |  | 6d | 2014-04-03 | 2014-04-10 |  | 17d | 0d |  | Глеб Ноздрачев [1%] | 0.48h |
| 291 | 1.4.4.14.17.2 | Mapper |  | 6d | 2014-04-11 | 2014-04-18 | 290 | 17d | 0d |  | Глеб Ноздрачев [80%] | 38.4h |
| 292 | 1.4.4.14.17.3 | **Настраиваемые коллекции** |  | 5d? | 2014-04-21 | 2014-04-25 | 291 | 31d | 14d |  |  | 32h |
| 293 | 1.4.4.14.17.3.1 | **Конфигурация коллекций** |  | 4d | 2014-04-21 | 2014-04-24 |  | 31d | 0d |  |  | 25.6h |
| 294 | 1.4.4.14.17.3.1.1 | Типовая иерархия кастомных папок (3шт) |  | 2d | 2014-04-21 | 2014-04-22 |  | 31d | 0d |  | Глеб Ноздрачев [80%] | 12.8h |
| 295 | 1.4.4.14.17.3.1.2 | Системные настройки для Зсд |  | 2d | 2014-04-23 | 2014-04-24 | 294 | 31d |  |  | Глеб Ноздрачев [80%] | 12.8h |
| 296 | 1.4.4.14.17.3.2 | Проверка работы |  | 1d? | 2014-04-25 | 2014-04-25 | 293 | 31d |  |  | Глеб Ноздрачев [80%] | 6.4h |

Notes:
- 280: Системные настройки для ВнД (1дескр + 10типов) [NNN] 1 дн
- 281: Х тестовых РКК ВнД [YYY] 2ч
- 295: Системные настройки для ВнД (1дескр + 10типов) [NNN] 1 дн
- 296: Х тестовых РКК ВнД [YYY] 2ч

| ID | WBS | Task | Type | Duration | Start | Finish | Predecessors | Total slack | Free slack | Constraint | Resources | Work |
| --- | --- | --- | --- | --- | --- | --- | --- | --- | --- | --- | --- | --- |
| 297 | 1.4.4.14.17.4 | **Разработка адаптеров для Зсд** |  | 10d | 2014-04-18 | 2014-05-02 | 291 | 17d | 0d |  |  | 72h |
| 298 | 1.4.4.14.17.4.1 | Задание поставлено | milestone | 0d | 2014-04-18 | 2014-04-18 |  | 17d | 0d | start no earlier than 2013-09-30 | Тугушев Илья [80%] |  |
| 299 | 1.4.4.14.17.4.2 | Разработка архитектуры дя адаптеров |  | 5d | 2014-04-21 | 2014-04-25 | 298 | 17d | 0d |  | Тугушев Илья [80%] | 32h |
| 300 | 1.4.4.14.17.4.3 | Разработка адаптеров |  | 5d | 2014-04-28 | 2014-05-02 | 299 | 17d |  |  | Александр Власюк | 40h |
| 301 | 1.4.4.14.17.5 | **Разработка коллекций** |  | 9d | 2014-05-05 | 2014-05-15 | 297 | 17d |  |  |  | 72h |
| 302 | 1.4.4.14.17.5.1 | Коллекции |  | 9d | 2014-05-05 | 2014-05-15 |  | 17d | 0d |  | (БТЛ) Олег Еренцов | 72h |
| 303 | 1.4.4.14.17.6 | Интеграция по Зсд выполнена | milestone | 0d | 2014-05-15 | 2014-05-15 | 291, 292, 302 | 17d |  |  |  |  |
| 304 | 1.4.4.14.18 | **Интеграция с CMJ по Обсуждениям и ознакомлениям** |  | 31d? | 2014-02-19 | 2014-04-02 | 76 | 48d |  |  |  | 214.88h |
| 305 | 1.4.4.14.18.1 | Конфиг ДОП |  | 6d | 2014-02-19 | 2014-02-26 |  | 48d | 0d |  | Глеб Ноздрачев [1%] | 0.48h |
| 306 | 1.4.4.14.18.2 | Mapper |  | 6d | 2014-02-27 | 2014-03-06 | 305 | 48d | 0d |  | Глеб Ноздрачев [80%] | 38.4h |
| 307 | 1.4.4.14.18.3 | **Настраиваемые коллекции** |  | 5d? | 2014-03-07 | 2014-03-13 | 306 | 62d | 14d |  |  | 32h |
| 308 | 1.4.4.14.18.3.1 | **Конфигурация коллекций** |  | 4d | 2014-03-07 | 2014-03-12 |  | 62d | 0d |  |  | 25.6h |
| 309 | 1.4.4.14.18.3.1.1 | Типовая иерархия кастомных папок (3шт) |  | 2d | 2014-03-07 | 2014-03-10 |  | 62d | 0d |  | Глеб Ноздрачев [80%] | 12.8h |
| 310 | 1.4.4.14.18.3.1.2 | Системные настройки для ОО |  | 2d | 2014-03-11 | 2014-03-12 | 309 | 62d |  |  | Глеб Ноздрачев [80%] | 12.8h |
| 311 | 1.4.4.14.18.3.2 | Проверка работы |  | 1d? | 2014-03-13 | 2014-03-13 | 308 | 62d |  |  | Глеб Ноздрачев [80%] | 6.4h |
| 312 | 1.4.4.14.18.4 | **Разработка адаптеров для ОО** |  | 10d | 2014-03-06 | 2014-03-20 | 306 | 48d | 0d |  |  | 72h |
| 313 | 1.4.4.14.18.4.1 | Задание поставлено | milestone | 0d | 2014-03-06 | 2014-03-06 |  | 48d | 0d | start no earlier than 2013-09-30 | Тугушев Илья [80%] |  |
| 314 | 1.4.4.14.18.4.2 | Разработка архитектуры дя адаптеров |  | 5d | 2014-03-07 | 2014-03-13 | 313 | 48d | 0d |  | Тугушев Илья [80%] | 32h |
| 315 | 1.4.4.14.18.4.3 | Разработка адаптеров |  | 5d | 2014-03-14 | 2014-03-20 | 314 | 48d |  |  | Александр Власюк | 40h |
| 316 | 1.4.4.14.18.5 | **Разработка коллекций** |  | 9d | 2014-03-21 | 2014-04-02 | 312 | 48d |  |  |  | 72h |
| 317 | 1.4.4.14.18.5.1 | Коллекции |  | 9d | 2014-03-21 | 2014-04-02 |  | 48d | 0d |  | (БТЛ) Олег Еренцов | 72h |
| 318 | 1.4.4.14.18.6 | Интеграция по ОО выполнена | milestone | 0d | 2014-04-02 | 2014-04-02 | 306, 307, 317 | 48d |  |  |  |  |
| 319 | 1.4.4.14.19 | **Интеграция с CMJ по Формированию дел** |  | 31d? | 2014-02-19 | 2014-04-02 | 76 | 48d |  |  |  | 214.88h |
| 320 | 1.4.4.14.19.1 | Конфиг ДОП |  | 6d | 2014-02-19 | 2014-02-26 |  | 48d | 0d |  | Глеб Ноздрачев [1%] | 0.48h |
| 321 | 1.4.4.14.19.2 | Mapper |  | 6d | 2014-02-27 | 2014-03-06 | 320 | 48d | 0d |  | Глеб Ноздрачев [80%] | 38.4h |

Notes:
- 310: Системные настройки для ВнД (1дескр + 10типов) [NNN] 1 дн
- 311: Х тестовых РКК ВнД [YYY] 2ч

| ID | WBS | Task | Type | Duration | Start | Finish | Predecessors | Complete | Total slack | Free slack | Constraint | Resources | Work | Actual work |
| --- | --- | --- | --- | --- | --- | --- | --- | --- | --- | --- | --- | --- | --- | --- |
| 322 | 1.4.4.14.19.3 | **Настраиваемые коллекции** |  | 5d? | 2014-03-07 | 2014-03-13 | 321 |  | 62d | 14d |  |  | 32h |  |
| 323 | 1.4.4.14.19.3.1 | **Конфигурация коллекций** |  | 4d | 2014-03-07 | 2014-03-12 |  |  | 62d | 0d |  |  | 25.6h |  |
| 324 | 1.4.4.14.19.3.1.1 | Типовая иерархия кастомных папок (3шт) |  | 2d | 2014-03-07 | 2014-03-10 |  |  | 62d | 0d |  | Глеб Ноздрачев [80%] | 12.8h |  |
| 325 | 1.4.4.14.19.3.1.2 | Системные настройки для ФД |  | 2d | 2014-03-11 | 2014-03-12 | 324 |  | 62d |  |  | Глеб Ноздрачев [80%] | 12.8h |  |
| 326 | 1.4.4.14.19.3.2 | Проверка работы |  | 1d? | 2014-03-13 | 2014-03-13 | 323 |  | 62d |  |  | Глеб Ноздрачев [80%] | 6.4h |  |
| 327 | 1.4.4.14.19.4 | **Разработка адаптеров для ФД** |  | 10d | 2014-03-06 | 2014-03-20 | 321 |  | 48d | 0d |  |  | 72h |  |
| 328 | 1.4.4.14.19.4.1 | Задание поставлено | milestone | 0d | 2014-03-06 | 2014-03-06 |  |  | 48d | 0d | start no earlier than 2013-09-30 | Тугушев Илья [80%] |  |  |
| 329 | 1.4.4.14.19.4.2 | Разработка архитектуры дя адаптеров |  | 5d | 2014-03-07 | 2014-03-13 | 328 |  | 48d | 0d |  | Тугушев Илья [80%] | 32h |  |
| 330 | 1.4.4.14.19.4.3 | Разработка адаптеров |  | 5d | 2014-03-14 | 2014-03-20 | 329 |  | 48d |  |  | Александр Власюк | 40h |  |
| 331 | 1.4.4.14.19.5 | **Разработка коллекций** |  | 9d | 2014-03-21 | 2014-04-02 | 327 |  | 48d |  |  |  | 72h |  |
| 332 | 1.4.4.14.19.5.1 | Коллекции |  | 9d | 2014-03-21 | 2014-04-02 |  |  | 48d | 0d |  | (БТЛ) Олег Еренцов | 72h |  |
| 333 | 1.4.4.14.19.6 | Интеграция по ФД выполнена | milestone | 0d | 2014-04-02 | 2014-04-02 | 321, 322, 332 |  | 48d |  |  |  |  |  |
| 334 | 1.4.4.14.20 | Основные коннеторы реализованы | milestone | 0d | 2013-12-09 | 2013-12-09 |  |  | 98d | 0d | start no earlier than 2013-12-09 |  |  |  |
| 335 | 1.4.4.14.21 | REST-протокол для АРМа - проектирование |  | 3d | 2013-06-25 | 2013-06-27 | 31 |  | 239d |  |  | Тугушев Илья; Денис Митавский [20%]; Андрей Пирожков [20%] | 33.6h |  |
| 336 | 1.4.4.15 | **Проверка работоспособности решения - Организация демонстрации** |  | 25d? | 2013-12-09 | 2014-01-22 | 334 |  | 98d |  |  |  | 448h |  |
| 337 | 1.4.4.15.1 | Подготовка стенда |  | 3d | 2013-12-09 | 2013-12-11 | 338SF |  | 120d |  |  | Влад Симоненко; Аналитик | 48h |  |
| 338 | 1.4.4.15.2 | Подготовка прототипа |  | 20d? | 2013-12-09 | 2014-01-15 |  |  | 98d | 0d |  | Влад Симоненко; Аналитик | 320h |  |
| 339 | 1.4.4.15.3 | Проведение демонстраций |  | 3d | 2014-01-16 | 2014-01-20 | 338 |  | 98d | 0d |  | Влад Симоненко; Аналитик | 48h |  |
| 340 | 1.4.4.15.4 | Анализ результатов - выводы |  | 2d | 2014-01-21 | 2014-01-22 | 339 |  | 98d |  |  | Влад Симоненко; Аналитик | 32h |  |
| 341 | 1.4.4.16 | **Сервис работы с вложениями** |  | 22d | 2013-07-11 A | 2013-08-09 A |  | 100% |  |  |  |  | 176h | 176h |
| 342 | 1.4.4.16.1 | Принято решение о проектировании сервиса обработки вложений | milestone | 0d | 2013-07-11 A | 2013-07-11 A |  | 100% |  |  | start no earlier than 2013-07-11 |  |  |  |
| 343 | 1.4.4.16.2 | API |  | 5d | 2013-07-11 A | 2013-07-17 A | 342 | 100% |  |  |  | Андрей Цветков | 40h | 40h |
| 344 | 1.4.4.16.3 | Реализация |  | 7d | 2013-07-18 A | 2013-07-26 A | 343 | 100% |  |  |  | Влад Симоненко | 56h | 56h |
| 345 | 1.4.4.16.4 | Исследования по перехватчику конца транзакции |  | 5d | 2013-07-29 A | 2013-08-02 A | 344 | 100% |  |  |  | Влад Симоненко | 40h | 40h |
| 346 | 1.4.4.16.5 | Чистка файлов в случае отката транзакции |  | 5d | 2013-08-05 A | 2013-08-09 A | 345 | 100% |  |  |  | Влад Симоненко | 40h | 40h |

Notes:
- 325: Системные настройки для ВнД (1дескр + 10типов) [NNN] 1 дн
- 326: Х тестовых РКК ВнД [YYY] 2ч

| ID | WBS | Task | Type | Duration | Start | Finish | Predecessors | Complete | Remaining | Total slack | Free slack | Constraint | Resources | Work | Actual work |
| --- | --- | --- | --- | --- | --- | --- | --- | --- | --- | --- | --- | --- | --- | --- | --- |
| 347 | 1.4.4.17 | **Работа с отчетами** |  | 40d | 2013-11-01 A | 2013-12-26 |  | 75% | 10d | 109d |  |  |  | 320h | 240h |
| 348 | 1.4.4.17.1 | Определен состав отчетов | milestone | 0d | 2013-11-01 | 2013-11-01 |  |  |  | 149d |  | start no earlier than 2013-11-01 |  |  |  |
| 349 | 1.4.4.17.2 | Система готова к интеграции с модулем отчетов | milestone | 0d | 2013-11-01 A | 2013-11-01 A | 348 | 100% |  |  |  | start no earlier than 2013-09-30 | Денис Митавский [50%]; Андрей Цветков |  |  |
| 350 | 1.4.4.17.3 | JDBC-драйвер для системы построения отчётов |  | 10d | 2013-11-01 A | 2013-11-14 A | 59, 349 | 100% |  |  |  |  | (БТЛ) Михаил Ларин | 80h | 80h |
| 351 | 1.4.4.17.4 | Интеграция с Jasper Reports |  | 20d | 2013-11-15 A | 2013-12-12 A | 350, 74 | 100% |  |  |  |  | (БТЛ) Михаил Ларин | 160h | 160h |
| 352 | 1.4.4.17.5 | GUI - отображение отчётов |  | 10d | 2013-12-13 | 2013-12-26 | 351 |  |  | 109d |  |  | Денис Митавский | 80h |  |
| 353 | 1.4.4.18 | **GUI** |  | 219d? | 2013-04-22 A | 2014-03-11 |  | 47% | 115.38d? | 62d | 0d |  |  | 1928h | 878.4h |
| 354 | 1.4.4.18.1 | Принято решение о применении GWT-компонентов | milestone | 0d | 2013-07-22 A | 2013-07-22 A |  | 100% |  |  |  | start no earlier than 2013-07-22 |  |  |  |
| 355 | 1.4.4.18.2 | Адаптация компонентов GUI из СМ4 для наложения на архитектуру см5 |  | 30d | 2013-07-22 A | 2013-09-02 A | 354 | 100% |  |  |  | start no earlier than 2013-07-11 | Тимофей Билый; Алексей Львов | 480h | 480h |
| 356 | 1.4.4.18.3 | Изучение GWT/Настройка CMJ 4 для дебага |  | 4d | 2013-08-05 A | 2013-08-08 A |  | 100% |  |  |  | start no earlier than 2013-08-05 | Андрей Карандей | 32h | 32h |
| 357 | 1.4.4.18.4 | Разработка базовой архитектуры GUI на основе GWT-компонентов |  | 3d | 2013-07-22 A | 2013-07-24 A | 354 | 100% |  |  |  |  | Денис Митавский | 24h | 24h |
| 358 | 1.4.4.18.5 | Интеграция с JAAS/Аутентификация |  | 5d | 2013-07-31 A | 2013-08-06 A | 357 | 100% |  |  |  | start no earlier than 2013-07-08 | Денис Митавский | 40h | 40h |
| 359 | 1.4.4.18.6 | Архитектура разметки главного экрана |  | 2d | 2013-08-07 A | 2013-08-08 A | 358 | 100% |  |  |  |  | Денис Митавский [50%] | 8h | 8h |
| 360 | 1.4.4.18.7 | **Панель навигации** |  | 29d | 2013-08-09 A | 2013-09-18 |  | 85% | 4.35d | 173d |  |  |  | 56h | 46.4h |
| 361 | 1.4.4.18.7.1 | Проектирование - панель навигации |  | 2d | 2013-08-09 A | 2013-08-12 A | 359 | 100% |  |  |  |  | Денис Митавский [50%] | 8h | 8h |
| 362 | 1.4.4.18.7.2 | Разработка - панель навигации |  | 6d | 2013-09-11 A | 2013-09-18 | 361, 364 | 80% | 1.2d | 173d | 0d |  | Андрей Карандей | 48h | 38.4h |
| 363 | 1.4.4.18.8 | GUI - архитектура плагинов/дочерних плагинов. Базис |  | 15d | 2013-08-13 A | 2013-09-03 A | 361 | 100% |  |  |  |  | Денис Митавский | 120h | 120h |
| 364 | 1.4.4.18.9 | Базовая реализация архитектуры плагинов |  | 5d | 2013-09-04 A | 2013-09-10 A | 363 | 100% |  |  |  |  | Андрей Карандей | 40h | 40h |
| 365 | 1.4.4.18.10 | **GUI - плагин отображения коллекций** |  | 15d | 2013-09-04 | 2013-09-24 | 363 |  |  | 174d |  |  |  | 64h |  |
| 366 | 1.4.4.18.10.1 | Проектирование |  | 2d | 2013-09-04 | 2013-09-05 | 363 |  |  | 183d | 0d |  | Денис Митавский | 16h |  |
| 367 | 1.4.4.18.10.2 | Разработка |  | 6d | 2013-09-17 | 2013-09-24 | 373 |  |  | 174d |  |  | Ярослав Бондарчук | 48h |  |
| 368 | 1.4.4.18.11 | **GUI - действия** |  | 96d | 2013-04-22 A | 2013-09-09 |  | 13% | 84d | 182d | 0d |  |  | 8h | 4h |
| 369 | 1.4.4.18.11.1 | Проектирование |  | 2d | 2013-09-06 A | 2013-09-09 | 366 | 50% | 1d | 182d |  |  | Денис Митавский [50%] | 8h | 4h |
| 370 | 1.4.4.18.11.2 | Разработка |  | 6d | 2013-04-22 | 2013-04-29 |  |  |  | 272d |  |  |  |  |  |

Notes:
- 349: Используя язык запросов коллеций
- 350: Используя язык запросов коллеций

| ID | WBS | Task | Duration | Start | Finish | Predecessors | Complete | Remaining | Total slack | Free slack | Resources | Work | Actual work |
| --- | --- | --- | --- | --- | --- | --- | --- | --- | --- | --- | --- | --- | --- |
| 371 | 1.4.4.18.12 | **Формы встроенного GUI** | 15d | 2013-09-10 A | 2013-09-30 |  | 38% | 9.38d | 170d |  |  | 124h | 44h |
| 372 | 1.4.4.18.12.1 | Конфигурация-архитектура | 1d | 2013-09-10 A | 2013-09-10 A | 369 | 100% |  |  |  | Денис Митавский [50%] | 4h | 4h |
| 373 | 1.4.4.18.12.2 | Маппинг на объекты | 2d | 2013-09-13 A | 2013-09-16 A | 372 | 100% |  |  |  | Ярослав Бондарчук | 16h | 16h |
| 374 | 1.4.4.18.12.3 | API GWT client-server | 3d | 2013-09-13 A | 2013-09-17 A | 372 | 100% |  |  |  | Денис Митавский | 24h | 24h |
| 375 | 1.4.4.18.12.4 | Реализация чтения | 5d | 2013-09-24 | 2013-09-30 | 49 |  |  | 104d | 0d | Денис Митавский | 40h |  |
| 376 | 1.4.4.18.12.5 | Реализация сохранения | 5d | 2013-09-19 | 2013-09-25 | 362, 374 |  |  | 173d |  | Андрей Карандей | 40h |  |
| 377 | 1.4.4.18.13 | **GUI - поиск** | 11d | 2013-10-01 | 2013-10-15 |  |  |  | 104d |  |  | 72h |  |
| 378 | 1.4.4.18.13.1 | GUI - поиск. Проектирование | 4d | 2013-10-01 | 2013-10-04 | 375 |  |  | 104d | 0d | Денис Митавский [50%] | 16h |  |
| 379 | 1.4.4.18.13.2 | GUI - поиск. Реализация | 7d | 2013-10-07 | 2013-10-15 | 378 |  |  | 104d | 42d | Андрей Карандей | 56h |  |
| 380 | 1.4.4.18.14 | **GUI - виджеты разработка** | 103d? | 2013-10-01 A | 2014-03-04 |  | 9% | 93.64d? | 62d |  |  | 840h | 40h |
| 381 | 1.4.4.18.14.1 | Дата/время | 5d | 2013-10-01 A | 2013-10-07 A | 375 | 100% |  |  |  | Тимофей Билый | 40h | 40h |
| 382 | 1.4.4.18.14.2 | Остальные без особенностей стиля ст.лебедева (базовый набор) | 25d? | 2013-12-13 | 2014-01-28 | 375, 379, 351 |  |  | 62d | 0d | Тимофей Билый; Алексей Львов | 400h |  |
| 383 | 1.4.4.18.14.3 | Остальные для стиля ст.лебедева | 25d? | 2014-01-29 | 2014-03-04 | 382 |  |  | 62d | 0d | Андрей Карандей; Алексей Львов | 400h |  |
| 384 | 1.4.4.18.15 | **GUI - брендинг, стилизация, темы** | 5d | 2014-03-05 | 2014-03-11 |  |  |  | 62d |  |  | 20h |  |
| 385 | 1.4.4.18.15.1 | Концепция | 5d | 2014-03-05 | 2014-03-11 | 378, 382, 383 |  |  | 62d |  | Денис Митавский [50%] | 20h |  |
| 386 | 1.4.4.19 | Тестирование производительности | 25d | 2013-09-10 A | 2013-10-14 | 368 | 80% | 5d | 162d |  | (БТЛ)Сергей Степыгин; (БТЛ) Дмитрий Лякин | 400h | 320h |
| 387 | 1.4.4.20 | **Дополнительные сервисы платформы** | 134d | 2013-08-28 | 2014-03-13 |  |  |  | 21.14d |  |  | 952h |  |
| 388 | 1.4.4.20.1 | Расширение функциональности DAO (требования CMJ4.1, базовые требования) | 30d | 2013-08-28 | 2013-10-08 | 36 |  |  | 21.14d | 0d | Валерий Мацукевич | 240h |  |
| 389 | 1.4.4.20.2 | Выделение конфигурации GUI в отдельные сущности, к изменению формата которых система не будет восприимчива | 9d | 2013-10-09 | 2013-10-21 | 388 |  |  | 21.14d | 0d | Валерий Мацукевич | 72h |  |
| 390 | 1.4.4.20.3 | Защита конфигурационных файлов от изменений | 5d | 2013-10-22 | 2013-10-28 | 389 |  |  | 21.14d | 0d | Валерий Мацукевич | 40h |  |
| 391 | 1.4.4.20.4 | Версионность/аудит | 8d | 2013-10-29 | 2013-11-07 | 390 |  |  | 21.14d | 0d | Валерий Мацукевич | 64h |  |
| 392 | 1.4.4.20.5 | Блокировки бизнес-объектов | 6d | 2013-11-08 | 2013-11-15 | 391 |  |  | 21.14d | 0d | Валерий Мацукевич | 48h |  |
| 393 | 1.4.4.20.6 | Описание структуры модуля Делопроизводство | 20d | 2013-09-10 | 2013-10-07 | 21, 15, 14, 65 |  |  | 105d | 4d | Владимир Панов | 160h |  |
| 394 | 1.4.4.20.7 | Уточнение состава и сроков работ | 2d | 2014-03-12 | 2014-03-13 | 353 |  |  | 62d |  | Андрей Пирожков; Денис Митавский; Тугушев Илья | 48h |  |
| 395 | 1.4.4.20.8 | Кросс-СУБД, поддержка Oracle | 15d | 2013-11-18 | 2013-12-06 | 392 |  |  | 21.14d | 0d | Валерий Мацукевич | 120h |  |
| 396 | 1.4.4.20.9 | SQL-trace | 5d | 2013-12-09 | 2013-12-13 | 395 |  |  | 103d | 0d | Влад Симоненко | 40h |  |
| 397 | 1.4.4.20.10 | Локализация (на уровне конфигурации) | 15d | 2013-12-16 | 2014-01-15 | 396 |  |  | 103d |  | Влад Симоненко | 120h |  |

Notes:
- 386: - полноценное, продуманное, конфигурируемое, полностью автоматизированное (вплоть до промежуточного сбора статистики в СУБД перед запуском тестов производительности) с автоматической генерацией таблиц и графиков, с поддержкой нагружающих потоков и т.п.
- 391: История модификации объекта / Версионность - на бизнес слой
- 395: Кросс-СУБД, поддержка Oracle
- 397: Поддержка ресурсных файлов - в расках конфигурирования ресурсных файлов / Подмена языка в интерфейсе (передача локали пользоввателю) -

| ID | WBS | Task | Type | Duration | Start | Finish | Predecessors | Complete | Remaining | Total slack | Free slack | Constraint | Resources | Work | Actual work |
| --- | --- | --- | --- | --- | --- | --- | --- | --- | --- | --- | --- | --- | --- | --- | --- |
| 398 | 1.4.4.21 | **Интеграция с системой управления учетными записями** |  | 14d | 2013-11-18 | 2013-12-05 | 392 |  |  | 124d |  |  |  | 56h |  |
| 399 | 1.4.4.21.1 | Интеграция с ActiveDirectory |  | 14d | 2013-11-18 | 2013-12-05 |  |  |  | 124d |  |  | Андрей Пирожков [50%] | 56h |  |
| 400 | 1.4.4.22 | **Расширение функций сервиса конфигурации** |  | 128d | 2013-07-09 A | 2014-01-14 | 395 | 32% | 86.86d | 89d |  |  |  | 352h | 72h |
| 401 | 1.4.4.22.1 | Расширяемость конфигурации |  | 12d | 2013-07-09 A | 2013-12-11 |  | 75% | 3d | 89d | 0d |  | Валерий Мацукевич | 96h | 72h |
| 402 | 1.4.4.22.2 | Изменение и дополнение конфигурации системы |  | 16d | 2013-12-12 | 2014-01-14 | 401 |  |  | 89d | 0d |  | Андрей Пирожков; Роман Митинков | 256h |  |
| 403 | 1.4.4.23 | **Сервис для работы с системным журналом** |  | 15d | 2014-01-15 | 2014-02-04 | 402 |  |  | 89d |  |  |  | 120h |  |
| 404 | 1.4.4.23.1 | Ведение журнала действий пользователей и действий с объектами системы |  | 10d | 2014-01-15 | 2014-01-28 |  |  |  | 89d | 0d |  | Андрей Карандей | 80h |  |
| 405 | 1.4.4.23.2 | Настройка уровня логирования |  | 5d | 2014-01-29 | 2014-02-04 | 404 |  |  | 89d |  |  | Андрей Карандей | 40h |  |
| 406 | 1.4.5 | **Разработка** |  | 256d | 2013-06-11 A | 2014-06-13 | 15 | 28% | 183.49d | 64d |  |  |  | 4756h | 1535.2h |
| 407 | 1.4.5.1 | Контроль и корректировка технических решений "Архитектурный комитет" |  | 209d | 2013-06-11 A | 2014-04-09 |  | 62% | 79d | 111d |  |  | Тугушев Илья [20%]; Андрей Пирожков [23.2%]; Денис Митавский [20%]; WEB-дизайнер [20%]; Аналитик [20%]; Владимир Панов [50%] | 2436h | 1535.2h |
| 408 | 1.4.5.2 | Разработка серверной логики модуля CMJ |  | 40d | 2013-10-14 | 2013-12-06 | 15, 44, 393 |  |  | 141d | 0d |  |  |  |  |
| 409 | 1.4.5.3 | **Разработка Форм для АРМ тематических администраторов** |  | 40d | 2013-12-23 | 2014-02-27 | 70 |  |  | 140.75d |  |  |  | 960h |  |
| 410 | 1.4.5.3.1 | **Подготовка работы со списками значений** |  | 40d | 2013-12-23 | 2014-02-27 |  |  |  | 140.75d |  |  |  | 640h |  |
| 411 | 1.4.5.3.1.1 | Разработка функционала учета организационно штатной структуры |  | 40d | 2013-12-23 | 2014-02-17 |  |  |  | 140.75d |  |  | Андрей Цветков | 320h |  |
| 412 | 1.4.5.3.1.2 | Разработка функционала с рубрикаторами (сложные справочники) |  | 20d | 2013-12-23 | 2014-01-30 |  |  |  | 140.75d | 0d |  | Валерий Мацукевич | 160h |  |
| 413 | 1.4.5.3.1.3 | Разработка функционала для работы с словарями данных (простые, линейные справочники) |  | 20d | 2014-01-30 | 2014-02-27 | 412 |  |  | 140.75d |  |  | Валерий Мацукевич | 160h |  |
| 414 | 1.4.5.3.2 | Разработка форм для работы в GUI (настройки форм) |  | 15d | 2013-12-23 | 2014-01-23 |  |  |  | 160.75d | 0d |  | Java разработчик3 | 120h |  |
| 415 | 1.4.5.3.3 | Разработка структуры рабочего места АРМ |  | 5d | 2014-01-23 | 2014-01-30 | 414 |  |  | 160.75d |  |  | Java разработчик3 | 40h |  |
| 416 | 1.4.5.3.4 | Разработка специфичных для форм АРМ элементов GUI |  | 20d | 2013-12-23 | 2014-01-30 |  |  |  | 160.75d |  |  | Java разработчик4 | 160h |  |
| 417 | 1.4.5.4 | **Подготовка базового набора отчетов** |  | 40d | 2014-02-10 | 2014-04-04 |  |  |  | 64d |  |  |  | 960h |  |
| 418 | 1.4.5.4.1 | Данные для подготовки базового набора отчетов собраны | milestone | 0d | 2014-02-10 | 2014-02-10 |  |  |  | 64d | 0d | start no earlier than 2014-02-10 |  |  |  |
| 419 | 1.4.5.4.2 | Структура данных для отчетов подготовлена и описана | milestone | 0d | 2014-02-10 | 2014-02-10 | 418 |  |  | 64d | 0d |  |  |  |  |
| 420 | 1.4.5.4.3 | Механизм управления отчетными формами подготовлен | milestone | 0d | 2014-02-10 | 2014-02-10 | 419 |  |  | 64d | 0d |  |  |  |  |
| 421 | 1.4.5.4.4 | Подготовка отчетов |  | 40d | 2014-02-10 | 2014-04-04 | 74, 408, 420, 418, 419 |  |  | 64d | 0d |  | Влад Симоненко; Алексей Львов; Андрей Карандей | 960h |  |
| 422 | 1.4.5.5 | Сопряжение с мобильным клиентом СМ4 |  | 50d | 2014-04-07 | 2014-06-13 | 408, 421 |  |  | 64d |  |  | Java разработчик3 | 400h |  |

Notes:
- 403: Сервис для работы с системным журналомВедение журнала действий пользователей и действий с объектами системы
- 404: Ведение журнала действий пользователей и действий с объектами системы

| ID | WBS | Task | Type | Duration | Start | Finish | Predecessors | Total slack | Free slack | Constraint | Resources | Work |
| --- | --- | --- | --- | --- | --- | --- | --- | --- | --- | --- | --- | --- |
| 423 | 1.4.6 | **Тестирование** |  | 68d? | 2014-05-16 | 2014-08-19 | 20 | 17d | 0d |  |  | 2544h |
| 424 | 1.4.6.1 | **Функциональное тестирование** |  | 53d? | 2014-05-16 | 2014-07-29 |  | 17d |  |  |  | 2224h |
| 425 | 1.4.6.1.1 | Подготовка ПМИ |  | 5d | 2014-05-16 | 2014-05-22 |  | 17d | 0d |  | Тест Аналитик | 40h |
| 426 | 1.4.6.1.2 | Разработка "сценариев тестирования" |  | 15d | 2014-05-16 | 2014-06-05 |  | 22d | 0d |  | Тест Аналитик | 120h |
| 427 | 1.4.6.1.3 | Разработка модели нагрузки для тестирования |  | 10d | 2014-05-23 | 2014-06-05 | 425 | 22d | 0d |  | Тест Аналитик | 80h |
| 428 | 1.4.6.1.4 | Адаптация автоматизированных сценариев от СМ4 для создания нагрузки |  | 25d | 2014-05-23 | 2014-06-26 | 425 | 17d | 0d |  | Влад Симоненко | 200h |
| 429 | 1.4.6.1.5 | **Проведение тестирования** |  | 38d? | 2014-06-06 | 2014-07-29 | 426, 427 | 22d |  |  |  | 1784h |
| 430 | 1.4.6.1.5.1 | **Подготовка среды тестирования** |  | 10d? | 2014-06-06 | 2014-06-19 |  | 22d |  |  |  | 200h |
| 431 | 1.4.6.1.5.1.1 | Разворачивание системы |  | 5d? | 2014-06-06 | 2014-06-12 | 433SF | 65d | 0d |  | Влад Симоненко | 40h |
| 432 | 1.4.6.1.5.1.2 | Система готова для подключения инструментов мониторинга | milestone | 0d | 2014-06-12 | 2014-06-12 | 431 | 65d |  |  |  |  |
| 433 | 1.4.6.1.5.1.3 | Наполнение данными |  | 10d? | 2014-06-06 | 2014-06-19 | 421 | 22d | 5d |  | Влад Симоненко; Java разработчик6 | 160h |
| 434 | 1.4.6.1.5.2 | Среда тестирования готова | milestone | 0d | 2014-06-26 | 2014-06-26 | 433, 428 | 17d | 0d | start no earlier than 2012-05-24 |  |  |
| 435 | 1.4.6.1.5.3 | Проведение тестирования |  | 10d | 2014-06-27 | 2014-07-10 | 434 | 17d | 0d |  | Тест Аналитик; Тестировщик [200%] | 240h |
| 436 | 1.4.6.1.5.4 | **Обработка результатов тестирования и внесение изменений в модуль** |  | 15d | 2014-07-09 | 2014-07-29 | 435FS-2d | 17d |  |  |  | 1344h |
| 437 | 1.4.6.1.5.4.1 | Устранение замечаний по результатам функционального тестирования |  | 15d | 2014-07-09 | 2014-07-29 |  | 17d | 0d |  | Java разработчик5; Влад Симоненко [300%]; Валерий Мацукевич; Java разработчик3; Java разработчик4; Андрей Карандей; Алексей Львов; Андрей Цветков | 1200h |
| 438 | 1.4.6.1.5.4.2 | Проверка устранения замечаний |  | 6d | 2014-07-22 | 2014-07-29 | 437FS-6d | 17d | 0d |  | Тест Аналитик; Тестировщик [200%] | 144h |
| 439 | 1.4.6.2 | **Нагрузочное тестирование** |  | 28d | 2014-07-10 | 2014-08-19 | 425 | 17d |  |  |  | 320h |
| 440 | 1.4.6.2.1 | Стенд для нагрузочного тестирования подготовлен | milestone | 0d | 2014-07-10 | 2014-07-10 | 435 | 30d | 13d | finish no earlier than 2012-06-09 |  |  |
| 441 | 1.4.6.2.2 | Проведения нагрузочного тестирования |  | 10d | 2014-07-30 | 2014-08-12 | 438, 428, 440 | 17d | 0d |  | Влад Симоненко; Тест Аналитик; Тестировщик | 240h |
| 442 | 1.4.6.2.3 | Обработка результатов нагрузочного тестирования |  | 5d | 2014-08-13 | 2014-08-19 | 441 | 17d |  |  | Тест Аналитик; Тестировщик | 80h |
| 443 | 1.4.7 | **Подготовка документации** |  | 80d | 2014-05-16 | 2014-09-04 | 423SS | 5d |  |  |  | 640h |
| 444 | 1.4.7.1 | Разработка документа "Концепция системы " |  | 40d | 2014-05-16 | 2014-07-10 |  | 5d | 0d |  | Владимир Панов | 320h |
| 445 | 1.4.7.2 | Разработка "Software Architecture Document" |  | 40d | 2014-07-11 | 2014-09-04 | 444 | 5d | 0d |  | Владимир Панов | 320h |
| 446 | 1.4.7.3 | Документы подготовлены | milestone | 0d | 2014-09-04 | 2014-09-04 | 445 | 5d |  |  |  |  |
